| uid | wbsOrder | name | start | finish | notes | actualStart | actualFinish | percentComplete | milestone | dependencies |
| --- | --- | --- | --- | --- | --- | --- | --- | --- | --- | --- |
| 157 | 1 | 子セッション 1・3(DFC-2870・CR-783・CR-782)の合流 | 2026-10-17T05:30:00 | 2026-10-17T08:28:00 | 終わり = 統合の枝を子セッション 3 へ合流した 69e7234f の時刻。 | 2026-10-17T05:30:00 | 2026-10-17T08:28:00 | 100 |  |  |
| 160 | 2 | 不具合の聞き取り(実績を入力する UI) | 2026-10-17T05:30:00 | 2026-10-17T09:15:00 | 終わり = ad6b6a10(DFC-2980・2981 の記録)。 | 2026-10-17T05:30:00 | 2026-10-17T09:15:00 | 100 |  |  |
| 163 | 3 | CR-789(タスクグループを運ぶ手掛かり, 束 A)の実装 | 2026-10-17T06:00:00 | 2026-10-17T12:44:00 | 2b6ff44b。 | 2026-10-17T06:00:00 | 2026-10-17T12:44:00 | 100 |  |  |
| 164 | 4 | CR-787(パネルの幅, 束 B)の実装 | 2026-10-17T06:00:00 | 2026-10-17T11:48:00 | ac1261ce。 | 2026-10-17T06:00:00 | 2026-10-17T11:48:00 | 100 |  |  |
| 166 | 5 | CR-786(最前面に配置, 束 D)の実装 | 2026-10-17T06:00:00 | 2026-10-17T10:50:00 | 0173c3cd。 | 2026-10-17T06:00:00 | 2026-10-17T10:50:00 | 100 |  |  |
| 161 | 6 | 聞き取りで出た不具合(DFC-2980)の直し | 2026-10-17T09:16:00 | 2026-10-17T10:24:00 | 8a74bd1b。 | 2026-10-17T09:16:00 | 2026-10-17T10:24:00 | 100 |  |  |
| 169 | 7 | CR-784(進行中の印を (→) に)の適用 | 2026-10-17T09:16:00 | 2026-10-17T10:24:00 | e80ff653。 | 2026-10-17T09:16:00 | 2026-10-17T10:24:00 | 100 |  |  |
| 170 | 8 | CR-785(ヘルプのリンクと行, DFC-3000〜3006)の適用 | 2026-10-17T09:43:00 | 2026-10-17T13:14:00 | 8cc9c320。 | 2026-10-17T09:43:00 | 2026-10-17T13:14:00 | 100 |  |  |
| 165 | 9 | CR-788(担当の欄, 束 C)の実装 | 2026-10-17T11:48:00 | 2026-10-17T12:36:00 | fbf21fa3。 | 2026-10-17T11:48:00 | 2026-10-17T12:36:00 | 100 |  |  |
| 158 | 10 | GT-2 の赤の直し(CR-782・785・787・788) | 2026-10-17T13:20:00 | 2026-10-17T15:06:00 | 6ad2a7fd。 | 2026-10-17T13:20:00 | 2026-10-17T15:06:00 | 100 |  |  |
| 162 | 11 | α のチェックリストの行を出荷ビルドで確かめる | 2026-10-17T15:06:00 | 2026-10-17T18:57:00 | チェックリストの子セッション 3e365fcf。 | 2026-10-17T15:06:00 | 2026-10-17T18:57:00 | 100 |  |  |
| 171 | 12 | 打鍵が欄から漏れる件(DFC-3100〜3103)の掃きと直し | 2026-10-17T18:57:00 | 2026-10-17T19:51:00 | ec9803f1。 | 2026-10-17T18:57:00 | 2026-10-17T19:51:00 | 100 |  |  |
| 172 | 13 | CR-790(大きな見本の矛盾を減らす)の適用 | 2026-10-17T19:51:00 | 2026-10-17T21:13:00 | ab1e1a3c。 | 2026-10-17T19:51:00 | 2026-10-17T21:13:00 | 100 |  |  |
| 175 | 14 | CR-791(取次の説明とスキーマの資源)の適用 | 2026-10-17T20:45:00 | 2026-10-18T02:52:00 | 0829239a。 | 2026-10-17T20:45:00 | 2026-10-18T02:52:00 | 100 |  |  |
| 159 | 15 | α 前の段ごとの GT-2 と push(ab1e1a3c・f1a0ec6d・815ecba8・0829239a) | 2026-10-17T21:13:00 | 2026-10-18T03:16:00 | 52eb7112(引継書)。 | 2026-10-17T21:13:00 | 2026-10-18T03:16:00 | 100 |  |  |
| 173 | 16 | CR-793・794(タスクのツールチップ)の適用 | 2026-10-17T21:13:00 | 2026-10-17T22:44:00 | f1a0ec6d。 | 2026-10-17T21:13:00 | 2026-10-17T22:44:00 | 100 |  |  |
| 174 | 17 | CR-792(改名 14 件と状態の語)の段 0〜2 | 2026-10-17T21:53:00 | 2026-10-18T02:13:00 | 815ecba8。 | 2026-10-17T21:53:00 | 2026-10-18T02:13:00 | 100 |  |  |
| 176 | 18 | RS-61 の語とダウンロード頁の語(DFC-3280) | 2026-10-18T05:29:00 | 2026-10-18T06:06:00 | fa609e26。 | 2026-10-18T05:29:00 | 2026-10-18T06:06:00 | 100 |  |  |
| 177 | 19 | CR-795・797(遅延診断の詰み・自分で走り直さない)の適用 | 2026-10-18T06:58:00 | 2026-10-18T08:27:00 | 8b212b74。 | 2026-10-18T06:58:00 | 2026-10-18T08:27:00 | 100 |  |  |
| 178 | 20 | CR-796(GRS Relay の 7 片)の適用 | 2026-10-18T08:27:00 | 2026-10-18T13:11:00 | 2be0c96c。 | 2026-10-18T08:27:00 | 2026-10-18T13:11:00 | 100 |  |  |
| 45 | 21 | CR-695(対話欄の廃止)—— CR-796 の 6 片目が当てた | 2026-10-18T11:08:00 | 2026-10-18T12:08:00 | 56a75399。 | 2026-10-18T11:08:00 | 2026-10-18T12:08:00 | 100 |  |  |
| 179 | 22 | DFC-3302(検索窓の IME)と CR-798〜802(チェック列・スキーマの部分読み) | 2026-10-18T17:06:00 | 2026-10-18T20:48:00 | e7770cde。 | 2026-10-18T17:06:00 | 2026-10-18T20:48:00 | 100 |  |  |
| 180 | 23 | サーバー同期のデモ(DFC-3070・3071)の組み立てと紹介頁 05 | 2026-10-18T22:19:00 | 2026-10-19T00:35:00 | afb41677。台帳の行は 仕様待ち のまま(測り直す)。 | 2026-10-18T22:19:00 | 2026-10-19T00:35:00 | 100 |  |  |
| 181 | 24 | 実地の利用の中継の直し(CR-803〜810) | 2026-10-19T07:56:00 | 2026-10-19T09:19:00 | d0a2f09e。 | 2026-10-19T07:56:00 | 2026-10-19T09:19:00 | 100 |  |  |
| 182 | 25 | コメントボックスの字の大きさ(CR-809・811・812) | 2026-10-19T08:59:00 | 2026-10-19T10:07:00 | 8b3ba840。 | 2026-10-19T08:59:00 | 2026-10-19T10:07:00 | 100 |  |  |
| 183 | 26 | CR-813 の 1 片目(修正の記録の .tsv・語の改め) | 2026-10-19T10:03:00 | 2026-10-19T10:20:00 | e59facc9。 | 2026-10-19T10:03:00 | 2026-10-19T10:20:00 | 100 |  |  |
| 184 | 27 | CR-814・816・817(AI の修正の記録・見出しの箱・説明の追従)の適用 | 2026-10-19T10:57:00 | 2026-10-19T11:25:00 | 34d6ee84。 | 2026-10-19T10:57:00 | 2026-10-19T11:25:00 | 100 |  |  |
| 139 | 28 | α の GT-2(34d6ee84、赤 3 件を残して出した)と push | 2026-10-19T11:25:00 | 2026-10-19T12:13:00 | 1bffcf05 が赤 3 件と PERF の数を引継書に書いた。 | 2026-10-19T11:25:00 | 2026-10-19T12:13:00 | 100 |  |  |
| 140 | 29 | α 版のリリース(Alpha-20261019T022508Z) | 2026-10-19T11:25:00 | 2026-10-19T11:25:00 | タグはビルド版 2026.1019.22508(UTC 02:25:08)。 | 2026-10-19T11:25:00 | 2026-10-19T11:25:00 | 100 | True |  |
| 185 | 30 | main への push を止める仕組み(JDG-2930〜2934) | 2026-10-20T03:30:00 | 2026-10-20T04:09:00 | 9c552a6e・90dc896e。始まりは推定。 | 2026-10-20T03:30:00 | 2026-10-20T04:09:00 | 100 |  |  |
| 186 | 31 | CR-819(studies/ への改名)・develop への改名・README・SECURITY | 2026-10-20T04:09:00 | 2026-10-20T05:03:00 | 83c98165。 | 2026-10-20T04:09:00 | 2026-10-20T05:03:00 | 100 |  |  |
| 187 | 32 | α のリリースノート(英日)と紹介頁の更新(JDG-2960・2961) | 2026-10-20T05:03:00 | 2026-10-20T05:59:00 | be281670。 | 2026-10-20T05:03:00 | 2026-10-20T05:59:00 | 100 |  |  |
| 188 | 33 | CR-820(配る物の版とバイト列を中身が変わるまで保つ)の適用 | 2026-10-20T05:59:00 | 2026-10-20T06:33:00 | 66aa3a43。 | 2026-10-20T05:59:00 | 2026-10-20T06:33:00 | 100 |  |  |
| 189 | 34 | CR-821(済んだ記録を history/ へ)の適用 | 2026-10-20T06:33:00 | 2026-10-20T06:41:00 | bbdfeec2。 | 2026-10-20T06:33:00 | 2026-10-20T06:41:00 | 100 |  |  |
| 190 | 35 | CR-822(版の規則を 1 つの表へ)の適用 | 2026-10-20T06:41:00 | 2026-10-20T07:39:00 | 9da0f3fa。 | 2026-10-20T06:41:00 | 2026-10-20T07:39:00 | 100 |  |  |
| 191 | 36 | 不具合 2 件・改善 3 件の記録と β に向けた計画の書き直し(記録と計画の子セッション) | 2026-10-20T23:20:00 | 2026-10-22T05:46:00 | 台帳の行 DFC-3390〜3410・裁定 JDG-3000〜3033、計画。終わり = この子セッションが計画を最後にコミットした 4ad56f84 の時刻。 | 2026-10-20T23:20:00 | 2026-10-22T05:46:00 | 100 |  |  |
| 147 | 37 | 週の使用量の戻り(10-21 水 19:00)と仕事の再開(10-22 木 08:15、第 1 波) | 2026-10-22T08:15:00 | 2026-10-22T08:15:00 | 記録と計画の子セッションが 10-21 未明に計画を書き直した。利用者と調整役が 10-22 08:00 に見直し(JDG-3043〜3047)、第 1 波の子セッションが 08:15 に動き出した。 | 2026-10-22T08:15:00 | 2026-10-22T08:15:00 | 100 | True |  |
| 198 | 38 | 第 1 波の合流と GT-2(赤 3 件が消えたか)・develop へ push | 2026-10-22T20:16:00 | 2026-10-22T21:29:00 | 10-23 測り直し: 終わり = refs/remotes/origin/develop の update by push 21:29（bf4a2b287）。 | 2026-10-22T20:16:00 | 2026-10-22T21:29:00 | 100 |  | 192 1 0 7, 193 1 0 7, 194 1 0 7 |
| 255 | 39 | 第 2 波 W1〜W4 の合流と GT-2(中継の版の上げは 1 回) | 2026-10-23T03:33:00 | 2026-10-23T05:12:00 | W1〜W4 の掃除が集まる。W5(台帳と記録)はこの後。 実績: GT-2 d24fc728 passed を確かめて develop へ push(05:12)。cr-820 の 1 件の時間切れは DFC-3456。 | 2026-10-23T03:33:00 | 2026-10-23T05:12:00 | 100 |  | 256 1 0 7, 117 1 0 7, 258 1 0 7, 259 1 0 7 |
| 261 | 40 | 第 2 波の後の基準線の下げ(G1・G3、検査 5 つ)と develop へ push —— D1・D7 を外すのは 275 へ分けた | 2026-10-23T05:50:00 | 2026-10-23T05:59:00 | 棚卸しの 10 節の「順」。基準線を下げるだけの仕事は調整役が最後に 1 回で行う。 実績: W5 を統合の枝へ合流した 05:50 から、40cdf29ef の push 05:59（update by push）まで。下げたのは検査 42・39・44・55・60、上げた行は無い。GT-2 で D1・D7 を外す仕事は、GT-2 が時間切れ 0 で通る（DFC-3456 の答えの後）まで待つので 275 に分けた。 | 2026-10-23T05:50:00 | 2026-10-23T05:59:00 | 100 |  | 260 1 0 7 |
| 284 | 41 | 裁定 5 行の記録と当て 3 つ(CR-825 ほか)の合流と push | 2026-10-23T06:42:00 | 2026-10-23T08:25:00 | 前の計画に無かった仕事。7ca29d2b9 の合流 06:42 から 5f905886a の push 08:25（update by push）まで。途中に検査の基準線の下げ 05de00f69（07:53）。 | 2026-10-23T06:42:00 | 2026-10-23T08:25:00 | 100 |  |  |
| 291 | 42 | 調整役の交代(引継書の節と台帳) | 2026-10-24T14:47:00 | 2026-10-24T14:54:00 | 前の計画に無かった仕事。規則 07 の作り直し efed5c9a3 を統合の枝へ合流した 14:47 から、引継書の f4408f4eb 14:54 まで（使用 86% で交代）。 | 2026-10-24T14:47:00 | 2026-10-24T14:54:00 | 100 |  |  |
| 299 | 43 | 10-24〜25 の合流分の dist の組み直し・中継とデモの版の上げ・GT-2・push | 2026-10-31T07:45:00 | 2026-10-31T10:45:00 | origin の develop は d0ae3a9c8（10-24 05:46）のまま。統合の枝と develop には CR-850 の src・規則 07・検査 90〜93・CR-851 の起草とレビューがあり、検査 85 が赤（dist と版が古い）。手順は docs/development-rules/10-versions.md。長さは合流の前の見積 3 時間。 10-31 07:45: まだ始めていない（origin の develop は d0ae3a9c8 のまま）。今から置き直した。 |  |  | 0 |  |  |
| 275 | 44 | known-red の揺れる 4 行(D1)と時間切れの延ばし(D7)を外し、GT-2 が時間切れ 0 で通るのを確かめる | 2026-10-31T07:45:00 | 2026-10-31T10:45:00 | 棚卸しの D1・D7。外す条件は「GT-2 が時間切れ 0 で通る」。d24fc728 の GT-2 は cr-820 の 1 件が時間切れ（DFC-3456）なので、その答え（272）の後。261 から分けた。 10-24: DFC-3456（cr-820 を 20 秒、JDG-3116）は実測済。ただし GT-2 で cr-822 の時間切れが出た（DFC-3493、JDG-3144）ので、外す条件はまだ満たされない —— 281 の後。 10-31 07:45: まだ始めていない（origin の develop は d0ae3a9c8 のまま）。今から置き直した。 |  |  | 0 |  | 272 1 0 7, 281 1 0 7 |
| 87 | 45 | CR-767(状態機械の原稿)の合流と確かめ | 2026-10-23T13:18:00 | 2026-10-23T21:47:00 | 実績 10-24: 波 1 の合流 13:18 から波 3 の push 21:47（c4334ee9e、update by push）まで。途中の push は 13:46（波 1）と 20:20（波 2。fefe064fd の GT-2 が DFC-3459 で赤 → cf0617d76）。 | 2026-10-23T13:18:00 | 2026-10-23T21:47:00 | 100 |  | 86 1 0 7 |
| 105 | 46 | CR-768(保存の媒体の型)の C の合流と確かめ | 2026-10-23T22:21:00 | 2026-10-23T22:50:00 | 実績 10-24: 統合の枝への合流 22:21 から push 22:50（19ea8650e、update by push）まで。 | 2026-10-23T22:21:00 | 2026-10-23T22:50:00 | 100 |  | 104 1 0 7 |
| 199 | 47 | 週の使用量の戻り(10-28 水 19:00) | 2026-10-28T19:00:00 | 2026-10-28T19:00:00 |  |  |  | 0 | True |  |
| 36 | 48 | 片付けの合流と台帳の締め | 2026-11-21T19:15:00 | 2026-11-21T21:15:00 | 集まる依存線は描いていない(下の中央のコメント)。 |  |  | 0 |  |  |
| 31 | 49 | W4・W5 の合流と GT-2・push | 2026-11-26T03:15:00 | 2026-11-26T06:15:00 |  |  |  | 0 |  | 30 1 0 7 |
| 141 | 50 | 片付けの入った一括の GT-2 と push | 2026-11-26T06:15:00 | 2026-11-26T09:15:00 |  |  |  | 0 |  |  |
| 210 | 51 | PERF の測り(OneDrive を止めて) | 2026-11-26T11:30:00 | 2026-11-26T13:30:00 |  |  |  | 0 |  | 209 1 0 7 |
| 207 | 52 | 不具合の合流と GT-2・push | 2026-10-24T00:23:00 | 2026-10-24T02:46:00 | 実績 10-24: 段 2 の最初の合流（699fe7267 を統合の枝へ 00:23）から push 02:46（ee5b5afb8、update by push）まで。a60f69ed5 の GT-2 が赤 7 件（280 で直した）、ee5b5afb8 で通った。入ったのは 201〜206・236。残りの 235・268〜270 の合流は 283。 | 2026-10-24T00:23:00 | 2026-10-24T02:46:00 | 100 |  |  |
| 283 | 53 | 不具合の残り(235・268〜270)の合流と GT-2・push | 2026-11-26T10:30:00 | 2026-11-26T13:30:00 | 207 に入らなかった不具合の仕事が集まる。長さは 207 の前の見積 3 時間。集まる依存線は描かない。 |  |  | 0 |  |  |
| 216 | 54 | 週の使用量の戻り(11-04 水 19:00) | 2026-11-04T19:00:00 | 2026-11-04T19:00:00 |  |  |  | 0 | True |  |
| 48 | 55 | AI 連携の合流と GT-2・push | 2026-11-26T12:30:00 | 2026-11-26T15:30:00 |  |  |  | 0 |  |  |
| 221 | 56 | 新機能の合流と GT-2・push | 2026-11-26T14:30:00 | 2026-11-26T17:30:00 |  |  |  | 0 |  | 220 1 0 7 |
| 228 | 57 | 最後の合流と PERF・GT-2(重い試験は 1 回だけ) | 2026-11-27T01:45:00 | 2026-11-27T07:45:00 |  |  |  | 0 |  | 227 1 0 7 |
| 229 | 58 | node tools/release_version.mjs Beta・リリースノート(英日)・README の版の行 | 2026-11-27T07:45:00 | 2026-11-27T11:45:00 |  |  |  | 0 |  | 228 1 0 7 |
| 230 | 59 | リリースの sha の GT-2 と develop → main の PR | 2026-11-27T11:45:00 | 2026-11-27T14:45:00 |  |  |  | 0 |  | 229 1 0 7 |
| 232 | 60 | Pages の配備(gh workflow run pages.yml --ref main) | 2026-11-27T22:00:00 | 2026-11-27T23:00:00 |  |  |  | 0 |  | 231 1 0 7 |
| 49 | 61 | 計画の終わり | 2026-11-28T00:00:00 | 2026-11-28T00:00:00 |  |  |  | 0 | True | 234 1 0 7 |
| 200 | 62 | 遅延診断の ? と炎の裁定(DFC-3390: 基準日より後を開始で読むか・壁の件数も外すか)に答える | 2026-10-22T08:24:00 | 2026-10-22T08:29:00 | 問うのは裁定 6 件の問いの子セッション(JDG-3047、1 問ずつ JDG-1753)。CR の起草と当ては答えの後。 | 2026-10-22T08:24:00 | 2026-10-22T08:29:00 | 100 |  | 250 1 0 7 |
| 218 | 63 | ハイパーリンク(MSPDI に写すか・コメントのアイコンの置き場)とダークの色の導き方(JDG-326 の ② を覆す)に答える | 2026-10-22T20:14:00 | 2026-10-22T20:44:00 | 問うのは裁定 6 件の問いの子セッション(JDG-3047)。CR の起草(217)は答えの後。 実績: ダークの色(DFC-3394)は 20:14〜20:26、ハイパーリンク(DFC-3393)は 20:33〜20:44 に答えた(間に 238)。時刻は問いの子セッションの記録から。 | 2026-10-22T20:14:00 | 2026-10-22T20:44:00 | 100 |  | 250 1 0 7 |
| 238 | 64 | DFC-3397(左端に出す名前と札)の細部の協議に答える | 2026-10-22T20:26:00 | 2026-10-22T20:33:00 | 問うのは裁定 6 件の問いの子セッション(JDG-3047)。CR の起草(237)は答えの後。 | 2026-10-22T20:26:00 | 2026-10-22T20:33:00 | 100 |  | 250 1 0 7 |
| 254 | 65 | DFC-3392・3395(プロンプトの写し方・保存の確認の文)の裁定に答える | 2026-10-22T20:44:00 | 2026-10-22T20:45:00 | 問うのは裁定 6 件の問いの子セッション(JDG-3047)。 | 2026-10-22T20:44:00 | 2026-10-22T20:45:00 | 100 |  | 250 1 0 7 |
| 263 | 66 | 裁定 5 行(DFC-3430 端の日・DFC-3433 C7 の Developer C・DFC-3453 E17 の pages.yml・DFC-3456 時間切れ・PND-144)に答える | 2026-10-23T06:14:00 | 2026-10-23T06:41:00 | 棚卸しの 11 節。C7 は計画 196 から外すのを棚卸しが推す。 10-23: 棚卸しの C7・E17 は台帳の DFC-3433・DFC-3453 になり、ほかの 3 行と一緒に裁定 5 行の問い（271）が問う。 実績 10-24: 問いの子セッション rulings-five の枝の作られた時刻 06:14 から、答えを記録したコミット 7ca29d2b9 06:41 まで。5 行の答えは JDG-3113〜3117（答えの時刻そのものは記録に無いので、問いの間の全部に置いた）。 | 2026-10-23T06:14:00 | 2026-10-23T06:41:00 | 100 |  | 248 1 0 7 |
| 252 | 67 | 憲章の下書き(temp/charter-draft/CHARTER-ja.md)を直す | 2026-10-31T09:00:00 | 2026-10-31T11:00:00 | 利用者 2026-10-22「プロジェクト憲章も次の子セッションに引き継がせろ。」下書きは git に無視される所にある。 |  |  | 0 |  |  |
| 241 | 68 | 取次からページのアドレスを得る直し(DFC-3400・3401)の案 B1〜B6 に答える | 2026-10-24T06:09:00 | 2026-10-24T07:57:00 | 案は DFC-3400 の対応案の欄。暫定の直しはダウンロード頁の文で済んだ(CR-823)。恒久は後でじっくり考える(JDG-3012)。 実績 10-25: 答えの前倒し（285）の子セッションに B1 getPageUrl と答えた（JDG-3175・3176）。時刻は問いの枝の作られた時刻 06:09 から、答えを記録した fe671b418 07:57 まで（答えの時刻そのものは記録に無い）。当てる CR は CR-846（242）。 | 2026-10-24T06:09:00 | 2026-10-24T07:57:00 | 100 |  |  |
| 244 | 69 | DFC-3410(名前付きのフィルタの条件)の細部に答える | 2026-10-24T06:09:00 | 2026-10-24T07:57:00 | 問うのは起草の子セッション(JDG-1753)。 実績 10-25: 答えの前倒し（285）で答えた（JDG-3177〜3182）。時刻は 241 と同じ測り方。当てる CR は CR-847（243 が起草する）。 | 2026-10-24T06:09:00 | 2026-10-24T07:57:00 | 100 |  | 243 1 0 7 |
| 226 | 70 | チェックリストを実物で触る | 2026-11-26T21:00:00 | 2026-11-27T01:00:00 |  |  |  | 0 |  | 225 1 0 7 |

| uid | wbsOrder | name | start | finish | notes | actualStart | actualFinish | percentComplete | milestone | dependencies | deadline |
| --- | --- | --- | --- | --- | --- | --- | --- | --- | --- | --- | --- |
| 231 | 71 | PR を見て main へ合流する | 2026-11-27T21:00:00 | 2026-11-27T22:00:00 |  |  |  | 0 |  | 230 1 0 7 |  |
| 233 | 72 | Beta のタグを打ち、GitHub Release を作る | 2026-11-27T23:00:00 | 2026-11-28T00:00:00 |  |  |  | 0 |  | 232 1 0 7 |  |
| 234 | 73 | β 版のリリース(条件: β に入れた仕事が全部済み、GT-2 と PERF が通る。目安 11-09 09:00) | 2026-11-28T00:00:00 | 2026-11-28T00:00:00 | JDG-3001。日付で縛らない —— 目安は締め切り(deadline)に書いた。 |  |  | 0 | True | 233 1 0 7 | 2026-11-09T09:00:00 |
| 247 | 74 | β への計画の引き直しと利用者の答え 5 つの記録(JDG-3043〜3047) | 2026-10-22T08:18:00 | 2026-10-22T08:54:00 | 利用者と調整役が 10-22 08:00 に計画を見直した答え(JDG-3043〜3047)を記録し、計画を今日の始まりに合わせてずらした。 10-23 測り直し: 実績の開始 = 枝の作られた時刻（git reflog）。 | 2026-10-22T08:18:00 | 2026-10-22T08:54:00 | 100 |  |  |  |
| 248 | 75 | 読むだけの棚卸し(仕様・_source・_asset・コード・試験・道具の 6 つの所を数える) | 2026-10-22T08:15:00 | 2026-10-22T08:39:00 | JDG-3045・3046: α 版の直前の無理が残っていないかを数える。数を見て調整役が第 2 波の子セッションを改めて頼む。 | 2026-10-22T08:15:00 | 2026-10-22T08:39:00 | 100 |  |  |  |
| 192 | 76 | GT-2 の赤 ③ uc-008:76(コメントのダブルクリックで PR-21 に焦点が入らない)の調べと直し | 2026-10-22T08:24:00 | 2026-10-22T09:31:00 | 利用者に見える後戻りの疑い(CR-811/812 が関わる疑い)。台帳の行は調べた子セッションが立てる。 10-23 測り直し: 実績の開始 = 枝の作られた時刻（git reflog）。 枝には合流のときの後追いのコミット f5d36ee36（20:35）があるが、終わりは主の直し e3759a2f7 に置いた。 | 2026-10-22T08:24:00 | 2026-10-22T09:31:00 | 100 |  |  |  |
| 193 | 77 | GT-2 の赤 ① nfr-004 SWS-8(.tsv の IO-9 を押す探り)を足す | 2026-10-22T08:21:00 | 2026-10-22T11:17:00 | 10-23 測り直し: 実績の開始 = 枝の作られた時刻（git reflog）。 | 2026-10-22T08:21:00 | 2026-10-22T11:17:00 | 100 |  |  |  |
| 194 | 78 | GT-2 の赤 ② w3-t2(FR-135 の古い引用)を直す | 2026-10-22T08:21:00 | 2026-10-22T11:17:00 | 実績: 193 と同じ子セッション(gt2-red-tests)が 1 つのコミット 9e4a15c1c で 2 件を直した。194 だけの開始は記録に無いので 193 と同じ 08:15 に置いた。 10-23 測り直し: 実績の開始 = 枝の作られた時刻（git reflog）。 | 2026-10-22T08:21:00 | 2026-10-22T11:17:00 | 100 |  |  |  |
| 195 | 79 | 紹介頁・ダウンロード頁・デモの頁の語の直し(データだけ) | 2026-10-22T08:21:00 | 2026-10-22T08:39:00 | データだけの push は GT-2 なし(JDG-1965)。 10-23 測り直し: 実績の開始 = 枝の作られた時刻（git reflog）。 枝には後追いのコミット 5635f576d（21:04、DFC-3421）があるが、終わりは主の直し 14f838bc2 に置いた。 | 2026-10-22T08:21:00 | 2026-10-22T08:39:00 | 100 |  |  |  |
| 249 | 80 | 意図しない圧縮への備え(85% の知らせ・セッション台帳・引継書の検査・呼び名の統一)の仕組みと試し | 2026-10-22T08:18:00 | 2026-10-22T22:10:00 | JDG-3040〜3042・3044: 第 1 波と並行。試しは低いしきい値で知らせを出させ、コンテキストをわざと埋めない。 10-23 測り直し: 実績の開始 = 枝の作られた時刻（git reflog）。 | 2026-10-22T08:18:00 | 2026-10-22T22:10:00 | 100 |  |  |  |
| 250 | 81 | 利用者の裁定が要る 6 件(DFC-3390・3392・3393・3394・3395・3397)を 1 問ずつ問う | 2026-10-22T08:18:00 | 2026-10-22T20:45:00 | JDG-3047「今すぐ」: 1 問ずつ、場面・画面の名・2〜4 案・推奨と理由を添える(JDG-1753)。答えは利用者の行 200・218・238・254。 10-23 測り直し: 実績の開始 = 枝の作られた時刻（git reflog）。 | 2026-10-22T08:18:00 | 2026-10-22T20:45:00 | 100 |  |  |  |
| 262 | 82 | 裁定 6 件の答えの記録(JDG の行と台帳) | 2026-10-22T20:45:00 | 2026-10-22T20:57:00 | 利用者が今夜答えた後。台帳に触るので第 2 波はこの後に始める。 | 2026-10-22T20:45:00 | 2026-10-22T20:57:00 | 100 |  | 254 1 0 7 |  |
| 251 | 83 | 合流済みの作業木の掃除(第 1 波の後半) | 2026-10-23T03:03:00 | 2026-10-23T03:49:00 | 第 1 波の合流(198)の後。動いている子セッションの作業木には触れない。 実績 10-23: 54 本のうち 31 本を消した。残り 23 本は自動の判定に 2 度断られて止めた(共有メモ sweep-1023-work-note.md)。 残りの 23 本は 274。 | 2026-10-23T03:03:00 | 2026-10-23T03:49:00 | 100 |  |  |  |
| 274 | 84 | 合流済みの作業木の掃除の残り 23 本(自動の判定に断られて止めた分) | 2026-11-21T14:30:00 | 2026-11-21T15:00:00 | 251 の続き。一覧は作業木の掃除の作業メモ（共有メモ sweep-1023-work-note.md）。自動の判定が 2 度断ったので、利用者の許しか利用者の手で消す。長さは 251 の速さ（31 本で 46 分）から 30 分。 10-31: 用語集が決まるまで待つ（利用者 2026-10-30「まだ子セッションを進めたらだめだろ。 用語集が決まるまで待たせろ。」）。 |  |  | 0 |  |  |  |
| 253 | 85 | プロジェクト憲章(利用者が直した CHARTER-ja.md から)の仕上げ | 2026-11-21T14:30:00 | 2026-11-21T15:00:00 | 利用者が下書きを直した後に続ける。コミットするかは利用者が決める。 10-31: 用語集が決まるまで待つ（利用者 2026-10-30「まだ子セッションを進めたらだめだろ。 用語集が決まるまで待たせろ。」）。 |  |  | 0 |  | 252 1 0 7 |  |
| 256 | 86 | W1 仕様と _source／_assets の掃除(棚卸しの A・B の行、C3 の仕様の側 PI-9) | 2026-10-23T03:03:00 | 2026-10-23T04:45:00 | 棚卸し docs/review/cleanup-inventory-2026-10-22.md の 10 節。見込み M(半日〜1 日)。触ってよいファイルは 10 節の表のとおり。 | 2026-10-23T03:03:00 | 2026-10-23T04:45:00 | 100 |  | 248 1 0 7 |  |
| 116 | 87 | NOT_STORED_DUMMY_SIZES(生成済みの寸法, C2・E28)の読まれない写しと古い注の始末 | 2026-10-23T03:03:00 | 2026-10-23T03:11:00 | 前の計画の前提(生成への置き換え)は違った —— もう生成済み(棚卸しの 9 節)。 | 2026-10-23T03:03:00 | 2026-10-23T03:11:00 | 100 |  |  |  |
| 196 | 88 | 衛生の小物(PlanActualState の中の語の 2 組, C8)の揃え | 2026-11-21T14:30:00 | 2026-11-21T14:45:00 | 作業木の掃除は第 1 波の行 251 へ分けた。見本の Developer C の重なりはわざと(棚卸しの C7) —— 利用者の行 263 で問う。 10-23: W2 の報告に C8 は無い(手を付けていない)。 10-23: W2 の行の残り（今から）。 10-31: 用語集が決まるまで待つ（利用者 2026-10-30「まだ子セッションを進めたらだめだろ。 用語集が決まるまで待たせろ。」）。 |  |  | 0 |  |  |  |
| 77 | 89 | 古い STOP の印 15 件(DFC-2730, C9)の除去 | 2026-10-23T03:11:00 | 2026-10-23T03:32:00 | 前の計画は 16 件と書いた。今は 15(棚卸しの C9・F2)。台帳の側(F2)は W5。 実績 10-23: W2 が 11 か所を外した(3256bcf68)。残り 4 か所(PND-144 の 3・PND-313 の 1)は裁定待ち(DFC-2730)。 | 2026-10-23T03:11:00 | 2026-10-23T03:32:00 | 100 |  |  |  |
| 257 | 90 | W2 src の掃除(棚卸しの C4・C10・C15・E15・E16 ほか) | 2026-10-23T03:03:00 | 2026-10-23T03:32:00 | 棚卸しの 10 節。見込み M〜L(1 日) —— この行の 17 時間と、同じ行の 115・116・196・77・117 で 24 時間。中継の版の上げは 1 回、GT-2 が要る。CR-767(85・86・87・104…)はこの後。 | 2026-10-23T03:03:00 | 2026-10-23T03:32:00 | 100 |  |  |  |
| 117 | 91 | baseChangeCommandOf(名の複数形, C3)の言い直し —— W1 で仕様 PI-9 の名を直した後 | 2026-11-21T14:30:00 | 2026-11-21T14:45:00 | 仕様の PI-9 がこの名を名指すので、仕様の変更(W1)が先(棚卸しの 9 節)。 10-23: 仕様 PI-9 の変更が先(DFC-3432)。W2 は名を変えていない。 10-23: W2 の行の残り。仕様 PI-9 の変更が先。 10-31: 用語集が決まるまで待つ（利用者 2026-10-30「まだ子セッションを進めたらだめだろ。 用語集が決まるまで待たせろ。」）。 |  |  | 0 |  |  |  |
| 115 | 92 | edgeOf と baselineEdgeXOf(重複した関数, C1)の 1 つへの寄せ | 2026-10-23T07:15:00 | 2026-10-23T07:46:00 | 10-23: W2 が寄せると検査 26b が 123→126 で赤になったので捨てた。表 T-064 の行か基準線の許しが要る(DFC-3430)。 10-23: DFC-3430 の答えの記録（272）の後。 実績 10-24: 子セッション ruling-jobs-1023（枝の作られた時刻 07:15）が CR-825 で寄せた（JDG-3113、549775095 07:46）。同じコミットで見本の 2 人目の Developer C を直し（JDG-3114、DFC-3433）、PND-144 の STOP の印 3 か所を外した（JDG-3117）。枝には後追いのコミット 5f905886a（07:59、関門の前の検査の罠の直し）があるが、終わりは主のコミットに置いた。 | 2026-10-23T07:15:00 | 2026-10-23T07:46:00 | 100 |  | 248 1 0 7, 272 1 0 7 |  |
| 258 | 93 | W3 試験の掃除(棚卸しの D の行と G2) | 2026-10-23T03:03:00 | 2026-10-23T03:44:00 | 棚卸しの 10 節。見込み M(半日〜1 日)。D1・D7(known-red と時間切れを外す)は調整役の GT-2 の後(行 261)。 | 2026-10-23T03:03:00 | 2026-10-23T03:44:00 | 100 |  | 248 1 0 7 |  |
| 259 | 94 | W4 道具と目録の掃除(棚卸しの E の行・09-tools.md・About の版の形) | 2026-10-23T03:03:00 | 2026-10-23T03:22:00 | 棚卸しの 10 節。見込み M(半日〜1 日)。 | 2026-10-23T03:03:00 | 2026-10-23T03:22:00 | 100 |  | 248 1 0 7 |  |
| 118 | 95 | DFC-2646〜2648(STOP の仕分けで出た 3 行)の始末 —— 2647 の刈り取り(F3) | 2026-11-21T14:30:00 | 2026-11-21T14:45:00 | 台帳を書くのは W5 だけなので W5 の行に置いた。2646 は CR の候補(行 270)、2648 は大きさ L(棚卸しの F5)で後に残る。 10-23: W5 が DFC-2647 の数を測り直した(STOP 20)。fixed-defects.md への刈り取りは全行の刈り取りと一緒に行う。 10-31: 用語集が決まるまで待つ（利用者 2026-10-30「まだ子セッションを進めたらだめだろ。 用語集が決まるまで待たせろ。」）。 |  |  | 0 |  |  |  |
| 260 | 96 | W5 台帳と記録の掃除(棚卸しの F の行。古い STOP の台帳 F2 は W2 の後) | 2026-10-23T05:24:00 | 2026-10-23T05:49:00 | 棚卸しの 10 節。台帳を書くのはこの持ち場だけ。W2 が着いた後、最後に回す。 実績: 枝 w5-records-1023 の作られた時刻 05:24 から e8f9be588 05:49 まで。DFC-2647 の刈り取り（118）は全行の刈り取りと一緒に残した。 | 2026-10-23T05:24:00 | 2026-10-23T05:49:00 | 100 |  |  |  |
| 271 | 97 | 裁定 5 行(DFC-3430・3433・3453・3456・PND-144)を 1 問ずつ問う | 2026-10-23T06:14:00 | 2026-10-23T06:41:00 | 子セッション rulings-five。始まり = 枝 rulings-five-1023 の作られた時刻 06:14（git reflog）。1 問ずつ、場面・画面の名・2〜4 案・推奨を添える（JDG-1753）。答えは利用者の行 263。 実績 10-24: 終わり = 7ca29d2b9（06:41）。 | 2026-10-23T06:14:00 | 2026-10-23T06:41:00 | 100 |  |  |  |
| 272 | 98 | 裁定 5 行の答えの記録(JDG の行と台帳) | 2026-10-23T06:14:00 | 2026-10-23T06:41:00 | 利用者が答えた後（263）。DFC-3430 の答えで 115、DFC-3456 の答えで 275 が動ける。 実績 10-24: 問いと記録は同じ子セッションの 1 つのコミット 7ca29d2b9（06:41）で、分けられないので 271 と同じに置いた。 | 2026-10-23T06:14:00 | 2026-10-23T06:41:00 | 100 |  | 263 1 0 7 |  |
| 273 | 99 | 計画の予実の更新(実績の測り直しと、まだの仕事の組み直し) | 2026-10-23T06:21:00 | 2026-10-23T06:40:00 | 子セッション plan-actuals-1023（この計画を書いたもの）。始まり = 枝 plan-actuals-1023 の作られた時刻 06:21。見積は計画の引き直し 247 の 3 時間 × 0.74（2 時間 15 分）。 実績 10-24: 終わり = 49bfde28c（06:40）。 | 2026-10-23T06:21:00 | 2026-10-23T06:40:00 | 100 |  |  |  |
| 278 | 100 | cr-811 の 2 枚の絵の比べが GT-2 の負荷で揺れる件(DFC-3467)—— 時計を止める | 2026-10-23T16:59:00 | 2026-10-23T17:20:00 | 前の計画に無かった仕事。枝 cr811-flake の作られた時刻 16:59 から 43aac9f3b 17:20 まで。 | 2026-10-23T16:59:00 | 2026-10-23T17:20:00 | 100 |  |  |  |
| 279 | 101 | 利用者の依頼の調べ | 2026-10-23T17:00:00 | 2026-10-23T19:34:00 | 前の計画に無かった仕事（読むだけ、コミット無し）。始まり = 枝の作られた時刻 17:00、終わり = アプリのセッション一覧の最後の動き 19:34。 | 2026-10-23T17:00:00 | 2026-10-23T19:34:00 | 100 |  |  |  |
| 281 | 102 | cr-822 の道具の試験の時間切れを 1 件 20 秒にする(JDG-3144、DFC-3493) | 2026-10-24T05:26:00 | 2026-10-24T05:41:00 | 前の計画に無かった仕事。ee5b5afb8 の後の GT-2 で cr-822 の 1 件が負荷で時間切れ。始まり = 枝 cr822-timeout の作られた時刻 05:26。見積は同じ型の 278（21 分）から 30 分。 実績 10-25: 終わり = c22cdbf0a（05:41）。合流 05:41、push 05:42（8dacb823b）。 | 2026-10-24T05:26:00 | 2026-10-24T05:41:00 | 100 |  |  |  |
| 282 | 103 | 計画の予実と引継書の最新の節の更新(ee5b5afb8 の姿へ) | 2026-10-24T05:27:00 | 2026-10-24T05:46:00 | 子セッション plan-handoff-1024（この計画を書いたもの）。始まり = 枝 plan-handoff-1024 の作られた時刻 05:27。見積は 273 の見積 2 時間 15 分のまま。 実績 10-25: 終わり = 5e186f50a（05:46）。合流と push は d0ae3a9c8（05:46）。 | 2026-10-24T05:27:00 | 2026-10-24T05:46:00 | 100 |  |  |  |
| 300 | 104 | 計画の予実の更新(10-25: CR-851 の 1 週間のレビュー・CR-854・答えの前倒し) | 2026-10-25T18:28:00 | 2026-10-25T18:44:00 | 子セッション plan-handoff-1024 の 2 回目（新しい調整役の頼み）。始まり = develop を早送りした 10-25 18:28。見積は 1 時間。 実績 10-29: 終わり = 70d6420fb（18:44）。 | 2026-10-25T18:28:00 | 2026-10-25T18:44:00 | 100 |  |  |  |
| 285 | 105 | 計画 241・244・217 の答えの前倒し(1 問ずつ問い、記録する) | 2026-10-24T06:09:00 | 2026-10-24T16:51:00 | 前の計画に無かった仕事（利用者 2026-10-24「よしやれ」）。枝 answers-ahead の作られた時刻 06:09 から 5ef0971a9 16:51 まで。JDG-3175〜3185。GRS JSON の形を β の前に直す裁定（JDG-3206〜3208）もここで出た。 | 2026-10-24T06:09:00 | 2026-10-24T16:51:00 | 100 |  |  |  |
| 287 | 106 | CR-850(基準日線・カーソル・掴みを 15 分に)の当て —— X-3a の 3 か所を除く | 2026-10-24T06:33:00 | 2026-10-24T07:53:00 | 前の計画に無かった仕事（DFC-3549、JDG-3201〜3205）。枝 baseline-15min の作られた時刻 06:33 から cfb7d159d 07:53 まで。合流 8d162d7c7（07:53）。dist の組み直しと版の上げは 299。 | 2026-10-24T06:33:00 | 2026-10-24T07:53:00 | 100 |  |  |  |
| 288 | 107 | CR-850(基準日線・カーソル・掴みを 15 分に)の X-3a の 3 か所の当て —— W4 前半の後 | 2026-11-25T23:30:00 | 2026-11-26T00:00:00 | baseline-15min の残り。W4 前半（27）と CR-851 の当て（296）の後に再開する。見積は 30 分。 |  |  | 0 |  | 27 1 0 7, 296 1 0 7 |  |
| 289 | 108 | 規則 07 を原本(gr-sw-maker の review-standards)の派生に作り直し、検査 90 と略語の正式名を足す | 2026-10-24T07:57:00 | 2026-10-24T16:23:00 | 前の計画に無かった仕事（JDG-3221〜3230・3241〜3250）。枝 rule-primitive-obsession の作られた時刻 07:57 から 4036c4bb5 16:23 まで（途中 efed5c9a3 14:46）。合流 49bfe529a 16:25。 | 2026-10-24T07:57:00 | 2026-10-24T16:23:00 | 100 |  |  |  |
| 290 | 109 | 再発防止の検査 91〜93(07 の旧番号・07 と原本・依存と OSS) | 2026-10-24T14:57:00 | 2026-10-24T16:28:00 | 前の計画に無かった仕事（利用者の優先の順の ①、JDG-3251）。枝 recurrence-checks の作られた時刻 14:57 から 0b6c6cea9 16:28 まで。 | 2026-10-24T14:57:00 | 2026-10-24T16:28:00 | 100 |  |  |  |
| 292 | 110 | 外への約束(GRS JSON・Agent API・MCP・読み書きの形)の仕様の行の棚卸し(study 77) | 2026-10-24T18:09:00 | 2026-10-24T18:41:00 | 前の計画に無かった仕事。枝 external-contract-inventory の作られた時刻 18:09 から 80927c91d 18:41 まで。 | 2026-10-24T18:09:00 | 2026-10-24T18:41:00 | 100 |  |  |  |
| 293 | 111 | CR-851(GRS JSON を β の前に 1 回だけ組み替え、α の文書は変換させる)の起草 | 2026-10-24T16:43:00 | 2026-10-25T09:40:00 | 前の計画に無かった仕事（JDG-3206〜3208・3259〜3268 ほか）。枝 cr851-json-reshape の作られた時刻 10-24 16:43 から 7b1245365 10-25 09:40 まで。同じ子セッションが CR-848・849 も起草した（217）。合流 4b4dae6fe 09:41。 | 2026-10-24T16:43:00 | 2026-10-25T09:40:00 | 100 |  |  |  |
| 294 | 112 | 拡大縮小の戦略の調べ(study 78)と CR-853 の起草 | 2026-10-25T03:06:00 | 2026-10-25T08:07:00 | 前の計画に無かった仕事（JDG-3290〜3297、DFC-3594）。枝の作られた時刻 10-25 03:06 から cc379998c 08:07 まで。 | 2026-10-25T03:06:00 | 2026-10-25T08:07:00 | 100 |  |  |  |
| 301 | 113 | 名の辞書(用語集)のレビューと確定(13-glossary.md。43 パート 1512 語) | 2026-10-26T22:35:00 | 2026-11-21T14:30:00 | 利用者 2026-10-29「JSONスキーマのレビューは後だよ ... 用語集のレビューと確定が先。」。始まり = 用語の監査を始めた fc2626b63（10-26 22:35）。その後、語の木の紙・キーの名の紙・SSOT の紙（study 81）を閉じ、10-28 に辞書の初版 1510 語（d7699c9b1）、10-29 01:56 に 1・2 巡（5e557ab19、パート 1〜4 の 101 語）。終わりの見込み: 残り 1411 語（最初の 21 パートの残り 612・残りの 22 パート 799）÷ 測った速さ 25.2 語／時（101 語を 10-28 21:00〜25:00 の 4 時間）＝ 55.9 時間を、今から利用者の時間帯に置いた。 10-31: シート 13 の問 1〜4 を閉じた（パート 1〜5 の 111 語）。問 5（その 111 語の見直し）が 3 巡目。裁定は JDG-3428〜3490（3480 まで 281c14221 にコミット）。子セッションは 2 度代わった（cr851-review-apply-5 → 6）。次は群 4（パート 6〜13、311 語、下書きはできている）。終わりの見込みを測り直した: 111 語 ÷ 利用者の時間帯 10-28 夜〜10-30 夜の 13.5 時間 ＝ 8.2 語／時。残り 1397 語（パート 6〜13 の 311・30〜37 の 287・残りの 22 パート 799）÷ 8.2 ＝ 169.9 時間を、今から利用者の時間帯に置いた。 10-31 07:45: 裁定 JDG-3481〜3491 は用語集の子セッション（cr851-review-apply-6）に記録済み、まだコミットしていない。問 5 の 5-2-4・5-3・5-4 を閉じた（3489〜3491）。JDG-3491 で仕様の表の行 ID のキーは rowId → specTableRowId。問 5 そのもの（パート 1〜5 の 111 語を確定する a か直す b）はまだ開いていて、閉じた語は 111 のまま。利用者は 10-31 03:12〜06:01 にもシートを直した（シートの控えの時刻。置いた時間帯の外なので速さには数えていない）。速さ 8.2 語／時と残り 1397 語は前のままで、04:25 から今までに置いた時間帯が無いので、終わりの見込みは動かない。 | 2026-10-26T22:35:00 |  | 0 |  |  |  |
| 302 | 114 | CR-857(SSOT へ寄せる —— 名の原稿 glossary.json と生成、JDG-3411〜3427)の起草と当て | 2026-11-25T22:00:00 | 2026-11-26T01:30:00 | カードはまだ起きていない。CR-851 の当て（296）の後。見積は CR-767 の 3 つの波の実績の合計 186 分から 3 時間。 10-31: JDG-3483（規則 07 の R1 の目的の節、原本を先に）と、選べば src の JSON の rowId → specRowId の改名も持つ（見積に 30 分を足した）。カードは引っ込めた —— 用語集の後に出し直す。 10-31 07:45: JDG-3491 で src の JSON の rowId → specTableRowId の改名をこの CR が持つと決まった（前の注の「選べば」「specRowId」ではない）。見積は 3 時間 30 分のまま。 |  |  | 0 |  | 296 1 0 7 |  |
| 303 | 115 | CR-855(名の辞書のとおりに仕様の文とコードの名を改める)の起草と当て | 2026-11-26T01:30:00 | 2026-11-26T05:45:00 | カードはまだ起きていない。CR-851 の後、CR-857 の後（同じ持ち手 —— 仕様の文を同時に触らない）。見積は改名の CR-792 の実績 4 時間 20 分から 4 時間 15 分。 10-31: カードは引っ込めた —— 用語集の後に出し直す。 |  |  | 0 |  |  |  |
| 304 | 116 | CR-856(語の裁定で変わる振る舞い —— プロパティパネルにプロジェクト名 JDG-3355・休日の設定をツールウィンドウに JDG-3356)の起草と当て | 2026-11-26T05:45:00 | 2026-11-26T07:15:00 | CR-851 の後。見積は 1 つの CR の当ての中央値 30 分 × 2 で 1 時間。 10-31: JDG-3477（遅延診断レポートに終わりの見込みの列）も持つ（見積に 30 分を足した）。 |  |  | 0 |  |  |  |
| 297 | 117 | CR-853(拡大縮小の戦略)の当て | 2026-11-25T22:00:00 | 2026-11-25T22:30:00 | CR-851 の当て（296）の後。見積は 1 つの CR の当ての実績の中央値 36.5 分（CR-825・826・830・831・767 の 3 波・768 C）を 15 分に丸めて 30 分。 |  |  | 0 |  | 296 1 0 7 |  |
| 298 | 118 | CR-854(変更履歴の窓・パレットのボタン・履歴を足す/直す/消す命令)の起草と当て | 2026-11-25T22:00:00 | 2026-11-26T00:30:00 | 利用者「調整役にいって「あとで」CRを起こしてもらえ。 一旦は計画をJSONに書いてもらうだけでいい。」（JDG-3332）。パレットの下の段の右端（二重カーソルから離す。履歴があれば緑）・窓は新しい順、列は changedAt・affectedArea・changeDescription・reason・note・changedBy、1 つ消す/全部消す（全部のときだけ問う）、取り消せる、ほかの検索の窓と同じ絞り、タスクへは飛ばない・applyCommands の命令。文書の形は CR-851 にある。CR-851 の当て（296）の後。見積は名前付きのフィルタの起草 243 と実装 245 の見積の和。 |  |  | 0 |  | 296 1 0 7 |  |
| 295 | 119 | CR-851・848・849 の行ごとのレビュー(利用者と子セッション cr851-review-apply、約 1 週間) | 2026-10-25T09:46:00 | 2026-11-23T21:45:00 | 利用者 2026-10-25「ちなみにJSONとAPIはあと1週間かけて丁寧にレビューする。 それぐらいの価値があるだろ？」。始まり = 枝の作られた時刻 09:46。終わりは最後のレビューのコミット c2fd5d8e2（10-25 18:00）から 1 週間と置いた。計画 241・243・244・217 の API の問いもこの頁に畳み込んだ。 10-29: 用語集の確定（301）の後に回った。終わりの見込み: まだ OK でない 445 行（3 つの表 509 行のうち OK 64）÷ 測った速さ 12.6 行／時（10-25 13:34〜21:16 に 97 行）＝ 35.3 時間を、301 の終わりから利用者の時間帯に置いた。 10-31: 用語集（301）の終わりを測り直したので、行のレビューの終わりも動いた（速さ 12.6 行／時と残り 445 行は前のまま）。 | 2026-10-25T09:46:00 |  | 0 |  |  |  |
| 296 | 120 | CR-851 の当て(GRS JSON の組み替えと変換の案内) | 2026-11-25T19:00:00 | 2026-11-25T22:00:00 | レビューの全部の行が OK になってから（295 の後）。見積は CR-767 の 3 つの波の実績の合計 186 分から 3 時間。 10-29: 用語集の確定（301）と行ごとのレビュー（295）の後。 |  |  | 0 |  |  |  |
| 15 | 121 | T-064(公開の名 約 479 の呼び出し形, DFC-2640)の書き起こしと再検討 | 2026-11-21T14:30:00 | 2026-11-21T15:45:00 |  |  |  | 0 |  |  |  |
| 264 | 122 | src の写しの畳み込み(C14・G13・F11・F12・F17) | 2026-11-21T15:45:00 | 2026-11-21T17:00:00 | 棚卸しの 10 節「第 2 波に入れない大きなもの」。大きさ L(時間は仮に 12 時間)。W2 の後。 |  |  | 0 |  |  |  |
| 12 | 123 | 罠の束(DFC-544・547・548・549)の実装 | 2026-11-21T17:00:00 | 2026-11-21T17:45:00 |  |  |  | 0 |  |  |  |
| 20 | 124 | 実装待ちの残り(DFC-464・532〜562・582・630 ほか 35 行)の実装 | 2026-11-21T17:45:00 | 2026-11-21T19:15:00 |  |  |  | 0 |  |  |  |
| 203 | 125 | 予定の日が 1 日前へずれる疑い(初見 AI の試験の子セッションの報告)の再現と直し | 2026-10-23T23:48:00 | 2026-10-24T00:42:00 | 再現の点は引継書。台帳の行は再現した子セッションが立てる。 実績 10-24: DFC-3478（押すだけでは日付を書かない）と DFC-3479（端とフェードの掴みを押して離しても何も書かない）。枝 bug-dateshift-3396 の作られた時刻 23:48 から 0790052a7 00:42 まで。同じ子セッションが 235 も調べた。 | 2026-10-23T23:48:00 | 2026-10-24T00:42:00 | 100 |  |  |  |
| 204 | 126 | 依存線の縦の部分が重なる(O-1)の直し | 2026-10-23T23:48:00 | 2026-10-24T00:24:00 | CR が要る(描き方)。 実績 10-24: 利用者の裁定 JDG-3135「直さない」（DFC-3484 は済みの台帳へ）。205 と同じ子セッション bug-deplines-hit（23:48〜65da2fcc8 00:24）。 | 2026-10-23T23:48:00 | 2026-10-24T00:24:00 | 100 |  |  |  |
| 235 | 127 | DFC-3396(.html に保存して開くと表示の状態が違う)の再現と直し | 2026-11-26T09:15:00 | 2026-11-26T09:45:00 | 再現の手順はまだ無い。集めることは台帳の行。直すのに CR が要るかは再現してから。 10-24: 子セッション bug-dateshift-3396 が 23:48〜00:42 に調べたが再現しなかった。DFC-3396 は未検討のまま、利用者の手掛かり待ち。 |  |  | 0 |  |  |  |
| 270 | 128 | 食い違う写しの畳み込みと px の比べ方の揃え(F4 DFC-2646・F9 DFC-630)の CR の起草と当て | 2026-11-26T09:45:00 | 2026-11-26T10:30:00 | 棚卸しの 11 節。CR の候補(答えが変わる疑い)。 |  |  | 0 |  |  |  |
| 211 | 129 | CR-813 の 2 片目(遅延診断レポートの親子関係のタブ, DFC-3358)の当て | 2026-11-26T10:30:00 | 2026-11-26T11:45:00 | 設計は CR-813 の 2 片目の節。利用者が実物で試してから Agent API と GRS Relay へ。 |  |  | 0 |  |  |  |
| 46 | 130 | CR-697(取次が口と鍵を覚える)の起草と当て | 2026-11-26T11:45:00 | 2026-11-26T12:15:00 | CR を起草する。 |  |  | 0 |  |  |  |
| 245 | 131 | DFC-3410(名前付きのフィルタの条件)の仕様と実装 | 2026-11-26T12:15:00 | 2026-11-26T13:45:00 | ハイパーリンクとダークの任意色の実装(219)が形式の版を上げた後に始める。 |  |  | 0 |  | 244 1 0 7 |  |
| 222 | 132 | 実測待ちの行を出荷ビルドで押す(1/3: 日程表・パネル・ドラッグ) | 2026-11-26T17:30:00 | 2026-11-26T18:45:00 | 実測待ち 約 525 行。Playwright で画面ごとに押し、実測済へ。 |  |  | 0 |  |  |  |
| 227 | 133 | チェックリストで出た直し(仮置き) | 2026-11-27T01:00:00 | 2026-11-27T01:45:00 |  |  |  | 0 |  | 226 1 0 7 |  |
| 85 | 134 | CR-767(状態機械の原稿)の波 1 の実装 | 2026-10-23T12:00:00 | 2026-10-23T13:18:00 | 実績 10-24: 枝 cr767-wave1 の作られた時刻 12:00 から 1b9b9d7f0 13:18 まで。 | 2026-10-23T12:00:00 | 2026-10-23T13:18:00 | 100 |  |  |  |
| 86 | 135 | CR-767(状態機械の原稿)の波 2 の実装 | 2026-10-23T16:59:00 | 2026-10-23T18:00:00 | 実績 10-24: 枝 cr767-wave2 の作られた時刻 16:59 から a857ac2c9 18:00 まで。同じ枝の DFC-3459（19:55）は 277 に分けた。 | 2026-10-23T16:59:00 | 2026-10-23T18:00:00 | 100 |  |  |  |
| 277 | 136 | 遅い 2 件のシステム試験を、確かめる中身を変えずに速くする(DFC-3459、JDG-3118) | 2026-10-23T18:06:00 | 2026-10-23T19:55:00 | 前の計画に無かった仕事。波 2 の GT-2（fefe064fd、develop へ 18:06）の時間切れ 2 件。始まり = fefe064fd が develop に着いた 18:06、終わり = 波 2 の枝の cf0617d76 19:55。 | 2026-10-23T18:06:00 | 2026-10-23T19:55:00 | 100 |  |  |  |
| 276 | 137 | CR-767(状態機械の原稿)の波 3 —— ガードの式を単位の判定へ生成する | 2026-10-23T20:31:00 | 2026-10-23T21:18:00 | 前の計画に無かった仕事。枝 cr767-wave3 の作られた時刻 20:31 から c4334ee9e 21:18 まで。検査 60・69 の数え方の直し（30f60a9f3）を含む。 | 2026-10-23T20:31:00 | 2026-10-23T21:18:00 | 100 |  |  |  |
| 104 | 138 | CR-768(保存の媒体の型)の C と CM-27 の注の実装 | 2026-10-23T21:55:00 | 2026-10-23T22:20:00 | 実績 10-24: 枝 cr768c-tree-guards の作られた時刻 21:55 から 19ea8650e 22:20 まで。木の判定の生成（DFC-3460、実測待ち）を含む。 | 2026-10-23T21:55:00 | 2026-10-23T22:20:00 | 100 |  |  |  |
| 286 | 139 | W4 前半(CR-578〜580)の分け方の計画を書いて止める | 2026-10-24T06:09:00 | 2026-10-24T07:53:00 | 前の計画に無かった仕事。枝 w4-first-half の作られた時刻 06:09 から 2f1795fe9 07:53 まで。計画は docs/review/w4-first-half-2026-10-24/。利用者の優先の順で CR-851 が先なので止めた。 | 2026-10-24T06:09:00 | 2026-10-24T07:53:00 | 100 |  |  |  |
| 27 | 140 | W4(アダプタ層の分割)の前半 CR-578→579→580 の実装(偶然の写し DFC-1071〜1073) | 2026-11-25T22:00:00 | 2026-11-25T23:30:00 | 10-25: 枝 w4-first-half が 10-24 06:09〜07:53 に分け方の計画を書いて止めた（286、利用者の優先の順で CR-851 が先）。CR-851 の当て（296）の後に再開する。 |  |  | 0 |  | 296 1 0 7 |  |

| uid | wbsOrder | name | start | finish | notes | actualStart | actualFinish | percentComplete | dependencies |
| --- | --- | --- | --- | --- | --- | --- | --- | --- | --- |
| 28 | 141 | W4 の後半(CR-581 の後半と properties-panel、DFC-1074・1075)の実装 | 2026-11-25T23:30:00 | 2026-11-26T01:00:00 |  |  |  | 0 |  |
| 29 | 142 | W5(異常系 DFC-586 ほか)の仕様 | 2026-11-26T01:00:00 | 2026-11-26T01:45:00 |  |  |  | 0 |  |
| 30 | 143 | W5(異常系)の実装と試験 —— 既知の赤 cr-586-iv-22 の 2 件(DFC-922)を緑に | 2026-11-26T01:45:00 | 2026-11-26T03:15:00 |  |  |  | 0 |  |
| 217 | 144 | DFC-3393・3394(ハイパーリンク・ダークの任意色)の CR の起草 | 2026-10-24T16:43:00 | 2026-10-25T09:40:00 | MSPDI は Task に Hyperlink・HyperlinkAddress・HyperlinkSubAddress を持つ。形式の版を 1 回だけ上げる(FR-073)。古い形を読む道は作らない。 実績 10-25: CR-848（ダークの任意色、DFC-3394）と CR-849（ハイパーリンク、DFC-3393）として、CR-851 と同じ子セッション cr851-json-reshape が起草した（枝の作られた時刻 10-24 16:43 から 7b1245365 10-25 09:40 まで）。 | 2026-10-24T16:43:00 | 2026-10-25T09:40:00 | 100 | 218 1 0 7 |
| 243 | 145 | DFC-3410(フィルタの条件に名前を付けて GRS JSON に幾つも保存する)の CR の起草 | 2026-11-25T19:00:00 | 2026-11-25T19:30:00 | 細部は利用者と別に詰める(JDG-3030「詳細は別途」)。FR-151 の結びの段・表 T-203 の S-560〜S-572・表 T-372 を読む。形式の版を DFC-3393・3394 と 1 回にまとめられるか見る。 10-25: CR-847。答えの前倒し（285）が起草に戻ったが、CR-851 のレビュー（295）が終わるまで待つ。 |  |  | 0 | 295 1 0 7 |
| 219 | 146 | CR-848・849(ダークの任意色・ハイパーリンク)の当て —— CR-851 の後、848 → 849 の順 | 2026-11-26T09:15:00 | 2026-11-26T10:45:00 | 10-25: 利用者が 1 週間かけて行ごとにレビューする（2026-10-25「ちなみにJSONとAPIはあと1週間かけて丁寧にレビューする。 それぐらいの価値があるだろ？」）。CR-851 の当て（296）の後。 |  |  | 0 | 218 1 0 7, 296 1 0 7 |
| 237 | 147 | DFC-3397(横に拡大して両端が外に出たタスクの名前を左端に出す)の CR の起草 | 2026-11-26T10:45:00 | 2026-11-26T11:15:00 | 細部は利用者と別に協議する(JDG-3006)。表 T-273(FR-109)の LP-1〜LP-6 と札の並び(表 T-272)を読む。 |  |  | 0 | 238 1 0 7 |
| 239 | 148 | DFC-3397(左端に出す名前と札)の仕様と実装 | 2026-11-26T11:15:00 | 2026-11-26T12:00:00 |  |  |  | 0 | 238 1 0 7 |
| 225 | 149 | 利用者のチェックリスト 1 枚(今日の 5 件・新機能・押せなかった行) | 2026-11-26T18:45:00 | 2026-11-26T19:15:00 |  |  |  | 0 |  |
| 17 | 150 | 試験待ち 23 行(DFC-550・567・641 ほか)の仕様だけを読む試験 | 2026-10-24T06:09:00 | 2026-10-24T06:48:00 | 実績 10-25: 枝 tests-23-rows の作られた時刻 06:09 から 5723eaa4e 06:48 まで（25 行）。 | 2026-10-24T06:09:00 | 2026-10-24T06:48:00 | 100 |  |
| 265 | 151 | 長い関数とファイルを割る(C19・F13、07 R2 の設計の判断) | 2026-11-21T14:30:00 | 2026-11-21T15:45:00 | 棚卸しの 10 節「第 2 波に入れない大きなもの」。大きさ L(時間は仮に 12 時間)。 |  |  | 0 |  |
| 266 | 152 | 試験の補助の写しの共通化(D14・D15) | 2026-11-21T15:45:00 | 2026-11-21T17:00:00 | 棚卸しの 10 節「第 2 波に入れない大きなもの」。大きさ L(時間は仮に 12 時間)。W3 の後に 1 つの子セッションで。 |  |  | 0 |  |
| 13 | 153 | 用語集の JSON 化(DFC-2175、7 表 382 行)の仕様と実装 | 2026-11-21T17:00:00 | 2026-11-21T18:15:00 | 数は棚卸しの A3 で 9 表 463 行から直した。第 2 波には入れない(_source の生成器と検査が W1 とぶつかる)。 |  |  | 0 |  |
| 201 | 154 | DFC-3390(基準日より後のタスクの ? と炎)の CR の起草と当て | 2026-10-23T23:48:00 | 2026-10-24T00:18:00 | CR が要る(表 T-315・T-316、FR-133・FR-136)。 実績 10-24: CR-826（DFC-3390）。枝 cr826-delay-marks の作られた時刻 23:48 から 699fe7267 00:18 まで。後追いの cr826-fix（a60f69ed5 01:57、図を develop のバイト列へ戻した）は数えない。炎の再現は DFC-3468 に残る。 | 2026-10-23T23:48:00 | 2026-10-24T00:18:00 | 100 | 200 1 0 7 |
| 242 | 155 | 取次から AI がページのアドレスを得る恒久の直し(DFC-3400・3401: B1〜B6 を決めてから CR) | 2026-11-26T09:15:00 | 2026-11-26T10:00:00 | 調べた子セッションの推奨は B1(取次が自分で答える道具 getPageUrl、案内の 1 行目で呼ばせる)。CR-697(口と鍵を覚える)とは別の直し。 10-25: CR-846 の起草と当ては CR-851 のレビュー（295）が終わるまで待つ。API の問いはレビューの頁に畳み込んだ。 |  |  | 0 | 241 1 0 7, 295 1 0 7 |
| 205 | 156 | ポインタの当たり判定(予定と依存線の優先順位)の見直し —— 見本と Playwright の掃き | 2026-10-23T23:48:00 | 2026-10-24T00:24:00 | 利用者 2026-10-17 の報告。ログは利用者の手元。CR が要る。 実績 10-24: CR-830（JDG-3134「線はインクだけ」、DFC-3483）。枝 bug-deplines-hit の作られた時刻 23:48 から 65da2fcc8 00:24 まで。 | 2026-10-23T23:48:00 | 2026-10-24T00:24:00 | 100 |  |
| 268 | 157 | 既定値の選び直しと公開スキーマの $id・比率の数(A10・B5・B10・F27)の CR の起草と当て | 2026-11-26T09:15:00 | 2026-11-26T10:00:00 | 棚卸しの 11 節。振る舞いが変わるので掃除の外。 |  |  | 0 |  |
| 214 | 158 | 中継の所見の残り(R5: 4・8・9・10・11・14・17・20・24)の当て | 2026-11-26T10:00:00 | 2026-11-26T11:15:00 | CR が要る。 |  |  | 0 |  |
| 215 | 159 | 中継の所見の「低」8 件(13・16・17・18・19・20・23・25) | 2026-11-26T11:15:00 | 2026-11-26T12:00:00 |  |  |  | 0 |  |
| 47 | 160 | DFC-2214・2215(AI が読む遅延診断にイナズマ線の頂点・読み方)の仕様と実装 | 2026-11-26T12:00:00 | 2026-11-26T12:30:00 |  |  |  | 0 |  |
| 220 | 161 | ハイパーリンクとダークの任意色の仕様だけを読む試験(別のサブエージェント) | 2026-11-26T12:30:00 | 2026-11-26T13:15:00 | 作り手は自分の単位を試験しない。 |  |  | 0 | 219 1 0 7 |
| 11 | 162 | 未検討 72 行(DFC-611・2560〜2569・2690〜2699・2770 ほか)のトリアージ | 2026-10-24T06:09:00 | 2026-10-24T06:46:00 | 実績 10-25: 枝 triage-72 の作られた時刻 06:09 から 3272f3c41 06:46 まで。96 行を仕分けた（裁定待ち 24 行、問いはまだ）。 | 2026-10-24T06:09:00 | 2026-10-24T06:46:00 | 100 |  |
| 267 | 163 | 道具の補助の写しの共通化(E20〜E22) | 2026-11-21T14:30:00 | 2026-11-21T15:45:00 | 棚卸しの 10 節「第 2 波に入れない大きなもの」。大きさ L(時間は仮に 12 時間)。共通の部品の置き場の設計から。 |  |  | 0 |  |
| 32 | 164 | トリアージで出た直しの実装 | 2026-11-21T15:45:00 | 2026-11-21T17:15:00 |  |  |  | 0 |  |
| 202 | 165 | DFC-3391・3392(プロンプトは本文だけ写し、スキーマは自動で保存)の CR の起草と当て | 2026-10-23T23:48:00 | 2026-10-24T01:40:00 | CR が要る(FR-068 の (3)・JDG-502 の一部を覆す、新しい IO- の行)。DFC-3391 の再現の手順もこの子セッションが探す。DFC-3392 の答えは行 254。 実績 10-24: CR-827（DFC-3392）。1 つの子セッション cr827-828-prompt-help が CR-827・828・832 を 1 つのコミット 843a543ff（01:40）で当てたので、202・236 と 206 の DFC-3003 の部分は同じ実績を持つ。DFC-3391 は再現の手順を探す。 | 2026-10-23T23:48:00 | 2026-10-24T01:40:00 | 100 | 254 1 0 7 |
| 206 | 166 | 日付の範囲(S-119/S-120 と MS Project の 1984〜2149)・DFC-3003(ライセンスの窓) | 2026-10-23T23:48:00 | 2026-10-24T01:40:00 | 実績 10-24: 日付の範囲は CR-831（JDG-3139、1984〜2149。子セッション bug-date-range 23:48〜b466b8699 00:25）、DFC-3003 は CR-832（202 の子セッション、843a543ff 01:40）。終わりは遅い方。 | 2026-10-23T23:48:00 | 2026-10-24T01:40:00 | 100 |  |
| 236 | 167 | DFC-3395(保存の確認がサイトの名を出し、通信するように読める)の調べと対応の案 | 2026-10-23T23:48:00 | 2026-10-24T01:40:00 | DFC-3395 の答え(行 254)に沿って手当てする。 実績 10-24: CR-828（DFC-3395、ヘルプが保存は何も送らないと言う）。202 と同じ子セッション・同じコミット。 | 2026-10-23T23:48:00 | 2026-10-24T01:40:00 | 100 | 254 1 0 7 |
| 280 | 168 | a60f69ed5 の GT-2 の赤 7 件の試験を CR-827・828 に合わせる | 2026-10-24T02:00:00 | 2026-10-24T02:06:00 | 前の計画に無かった仕事。202 の子セッションが、枝 cr827-gt2-fix の作られた時刻 02:00 から ee5b5afb8 02:06 まで。 | 2026-10-24T02:00:00 | 2026-10-24T02:06:00 | 100 |  |
| 269 | 169 | uid の最高水位と「行」と「タスクグループ」(F10 DFC-1066・F25 DFC-2174)の CR の起草と当て | 2026-11-26T09:15:00 | 2026-11-26T10:00:00 | 棚卸しの 11 節。振る舞いが変わるので掃除の外。 |  |  | 0 |  |
| 212 | 170 | CR-815(絞った表を AI が選んだ列でページに分けて読む)の当て | 2026-11-26T10:00:00 | 2026-11-26T11:15:00 |  |  |  | 0 |  |
| 213 | 171 | 接続が黙って切れる件(DFC-3340〜3342: ping・ページの下書き)の当て | 2026-11-26T11:15:00 | 2026-11-26T12:30:00 | DFC-3341 の下書きは CR が要る(L)。 |  |  | 0 |  |
| 240 | 172 | DFC-3397(左端に出す名前と札)の仕様だけを読む試験(別のサブエージェント) | 2026-11-26T12:30:00 | 2026-11-26T13:00:00 | 作り手は自分の単位を試験しない。 |  |  | 0 | 239 1 0 7 |
| 223 | 173 | 実測待ちの行を出荷ビルドで押す(2/3: 遅延診断・表・検索) | 2026-11-26T17:30:00 | 2026-11-26T18:45:00 |  |  |  | 0 |  |
| 197 | 174 | サーバー同期のデモの仕上げ(DFC-3070・3071 の状態を測り直し、配る zip で試す) | 2026-10-24T06:09:00 | 2026-10-24T06:29:00 | アプリ本体(dist/index.html)は 1 バイトも変えない。利用者 2026-10-17「まずは動くものを作るのが先だ」。 実績 10-25: 枝 demo-finish の作られた時刻 06:09 から 67c291388 06:29 まで（DFC-3539）。 | 2026-10-24T06:09:00 | 2026-10-24T06:29:00 | 100 |  |
| 18 | 175 | 仕様待ち 31 行の残り(DFC-560・631・1063〜1073 ほか)の CR の起草 | 2026-10-24T06:09:00 | 2026-10-24T06:55:00 | 実績 10-25: 枝 draft-crs-31 の作られた時刻 06:09 から 580aa3589 06:55 まで。CR-833〜838 を起草した（当てるのは 35）。 | 2026-10-24T06:09:00 | 2026-10-24T06:55:00 | 100 |  |
| 35 | 176 | 仕様待ちの残りの CR の実装 | 2026-11-21T14:30:00 | 2026-11-21T16:00:00 |  |  |  | 0 |  |
| 19 | 177 | DFC-730(GP-1 編集権限の行は読み取り専用)の実装 | 2026-11-21T16:00:00 | 2026-11-21T16:30:00 |  |  |  | 0 |  |
| 167 | 178 | DFC-2966・2967・2969(文書の形と実績の組み合わせの表, 束 E)の仕様と実装 | 2026-11-21T16:30:00 | 2026-11-21T17:15:00 |  |  |  | 0 |  |
| 208 | 179 | 性能の赤の切り分け —— 前の版との交互の比べ(JDG-726)と GR-28・MK-1 のプロファイル | 2026-11-26T09:15:00 | 2026-11-26T10:00:00 | α の PERF: MK-1 32.95 fps・MK-2 25.89・MK-7 30.43・GR-28 6.85 fps(60 fps に届かない、NFR-002/003)。 |  |  | 0 |  |
| 209 | 180 | 重い処理の直し(最も遅い GR-28 から) | 2026-11-26T10:00:00 | 2026-11-26T11:30:00 | CR が要る(描く手順の変更)。 |  |  | 0 |  |
| 246 | 181 | DFC-3410(名前付きのフィルタの条件)の仕様だけを読む試験(別のサブエージェント) | 2026-11-26T13:45:00 | 2026-11-26T14:30:00 | 作り手は自分の単位を試験しない。 |  |  | 0 | 245 1 0 7 |
| 224 | 182 | 実測待ちの行を出荷ビルドで押す(3/3: ファイル・書き出し・AI 連携) | 2026-11-26T17:30:00 | 2026-11-26T18:45:00 |  |  |  | 0 |  |
