# Core ERP Replacement Program

Schedule from MS Project XML, 2025-10-01 to 2028-02-02, status date 2026-08-26, costs in $, A marks actual dates.
ERP replacement and business process redesign
Hokuto Manufacturing Holdings, Inc.

## Calendars

- Standard: Mon-Fri 08:00-12:00, 13:00-17:00; Sat-Sun off. Exceptions (off unless hours are given): 2025-10-13 (Sports Day), 2025-11-03 (Culture Day), 2025-11-24 (Substitute Holiday), 2025-12-29 to 2026-01-03 (Year End and New Year Holiday), 2026-01-12 (Coming of Age Day), 2026-02-11 (National Foundation Day), 2026-02-23 (Emperor Birthday), 2026-03-20 (Vernal Equinox Day), 2026-04-29 (Showa Day), 2026-05-04 (Greenery Day), 2026-05-05 (Children Day), 2026-05-06 (Substitute Holiday), 2026-07-20 (Marine Day), 2026-08-11 (Mountain Day), 2026-08-13 to 2026-08-14 (Summer Company Holiday), 2026-09-21 (Respect for the Aged Day), 2026-09-23 (Autumnal Equinox Day), 2026-10-12 (Sports Day), 2026-11-03 (Culture Day), 2026-11-23 (Labor Thanksgiving Day), 2026-12-29 to 2027-01-03 (Year End and New Year Holiday), 2027-01-11 (Coming of Age Day), 2027-02-11 (National Foundation Day), 2027-02-23 (Emperor Birthday), 2027-03-22 (Substitute Holiday), 2027-04-29 (Showa Day), 2027-05-03 (Constitution Day), 2027-05-04 (Greenery Day), 2027-05-05 (Children Day), 2027-07-19 (Marine Day), 2027-08-11 (Mountain Day), 2027-08-13 to 2027-08-14 (Summer Company Holiday), 2027-09-20 (Respect for the Aged Day), 2027-09-23 (Autumnal Equinox Day), 2027-10-11 (Sports Day), 2027-11-03 (Culture Day), 2027-11-23 (Labor Thanksgiving Day), 2027-12-29 to 2028-01-03 (Year End and New Year Holiday), 2028-01-10 (Coming of Age Day).
- 24x7 Cutover: Mon-Sun 00:00-00:00.

## Resources

| Resource | Group | Rate |
| --- | --- | --- |
| Hasegawa Kunio | Program Steering | 190 |
| Amano Shigeru | Program Management | 160 |
| Kikuchi Rie | Program Management | 110 |
| Yokota Kei | Program Management | 90 |
| Sugiyama Toru | IT Department | 145 |
| Onodera Masaki | Architecture | 155 |
| Ito Naoko | Finance Stream | 130 |
| Murakami Jin | Procurement Stream | 130 |
| Kanda Shohei | Production Stream | 130 |
| Yamashita Aki | Sales Stream | 130 |
| Baba Toshio (SI Partner) | SI Partner | 175 |
| Kurihara Mei (SI Partner) | SI Partner | 175 |
| Sonoda Takumi (SI Partner) | SI Partner | 175 |
| Handa Yuri (SI Partner) | SI Partner | 175 |
| Okazaki Ren (SI Partner) | SI Partner | 185 |
| Aoki Sota | Development | 105 |
| Ikeda Nanami | Development | 105 |
| Uchida Kohei | Development | 105 |
| Enomoto Mio | Development | 105 |
| Okamoto Riku | Development | 105 |
| Kashiwagi Sae | Development | 105 |
| Kuroda Yamato | Development | 105 |
| Sasaki Hinata | Development | 105 |
| Tanigawa Osamu | Basis and Infrastructure | 135 |
| Fukui Kanade | Basis and Infrastructure | 120 |
| Segawa Toshiki | Network | 120 |
| Hoshino Kaori | Data Migration | 130 |
| Manabe Toru | Data Migration | 105 |
| Yagi Nozomi | Data Migration | 105 |
| Wakabayashi Sho | Data Migration | 100 |
| Nagai Chiaki | Test Management | 125 |
| Terada Yuma | Testing | 95 |
| Nomura Akane | Testing | 95 |
| Hirai Tsubasa | Testing | 90 |
| Matsuda Kanako | Change Management | 120 |
| Sakamoto Yuzu | Training | 90 |
| Nakai Gaku | Training | 90 |
| Tomita Rui | Security | 150 |
| Kaneko Hina | Security | 130 |
| Finance Key Users | Business | 80 |
| Procurement Key Users | Business | 80 |
| Production Key Users | Business | 80 |
| Sales Key Users | Business | 80 |
| Hardware and Cloud Platform | Capital Expenditure |  |
| ERP Software License | Capital Expenditure |  |
| SI Partner Fixed Fee | External Cost |  |
| Travel and Expenses | External Cost |  |
| Training Venue and Materials | External Cost |  |

## Schedule

| ID | WBS | Task | Type | Duration | Start | Finish | Predecessors | Complete | Remaining | Baseline start | Baseline finish | Baseline duration | Total slack | Free slack | Constraint | Resources | Work | Actual work | Cost | Baseline cost | Actual cost | Team | Deliverable |
| --- | --- | --- | --- | --- | --- | --- | --- | --- | --- | --- | --- | --- | --- | --- | --- | --- | --- | --- | --- | --- | --- | --- | --- |
| 1 | 1 | **Program Management** |  | 509d | 2025-10-01 A | 2027-11-12 |  | 90% | 50.9d | 2025-10-01 | 2027-11-12 | 509d | 52d | 0d |  |  | 834.4h | 694.4h | 1,120.64 | 1,120.64 | 900.64 |  |  |
| 2 | 1.1 | PMO Setup and Governance Definition |  | 10d | 2025-10-01 A | 2025-10-15 A |  | 100% |  | 2025-10-01 | 2025-10-15 | 10d |  |  |  | Amano Shigeru; Kikuchi Rie; Yokota Kei [50%] | 200h | 200h | 252 | 252 | 252 | Program Management |  |
| 3 | 1.2 | Program Master Schedule Baseline |  | 15d | 2025-10-16 A | 2025-11-06 A | 2 | 100% |  | 2025-10-16 | 2025-11-06 | 15d |  |  |  | Amano Shigeru; Kikuchi Rie [80%] | 216h | 216h | 297.6 | 297.6 | 297.6 | Program Management | Program Master Schedule |
| 4 | 1.3 | Risk and Issue Management Setup |  | 8d | 2025-10-16 A | 2025-10-27 A | 2 | 100% |  | 2025-10-16 | 2025-10-27 | 8d |  |  |  | Kikuchi Rie [60%]; Yokota Kei | 102.4h | 102.4h | 99.84 | 99.84 | 99.84 | Program Management |  |
| 5 | 1.4 | Quality Management Plan |  | 8d | 2025-10-16 A | 2025-10-27 A | 2 | 100% |  | 2025-10-16 | 2025-10-27 | 8d |  |  |  | Kikuchi Rie [50%]; Nagai Chiaki [50%] | 64h | 64h | 75.2 | 75.2 | 75.2 | Program Management |  |
| 6 | 1.5 | **Steering Committee** |  | 479d | 2025-11-14 A | 2027-11-12 |  | 44% | 268.24d | 2025-11-14 | 2027-11-12 | 479d | 52d |  |  |  | 252h | 112h | 396 | 396 | 176 |  |  |
| 7 | 1.5.1 | Steering Committee #1 |  | 1d | 2025-11-14 A | 2025-11-14 A |  | 100% |  | 2025-11-14 | 2025-11-14 | 1d |  |  | start no earlier than 2025-11-14 | Hasegawa Kunio; Amano Shigeru; Kikuchi Rie [50%]; Sugiyama Toru | 28h | 28h | 44 | 44 | 44 | Program Management |  |
| 8 | 1.5.2 | Steering Committee #2 |  | 1d | 2026-02-13 A | 2026-02-13 A |  | 100% |  | 2026-02-13 | 2026-02-13 | 1d |  |  | start no earlier than 2026-02-13 | Hasegawa Kunio; Amano Shigeru; Kikuchi Rie [50%]; Sugiyama Toru | 28h | 28h | 44 | 44 | 44 | Program Management |  |
| 9 | 1.5.3 | Steering Committee #3 |  | 1d | 2026-05-15 A | 2026-05-15 A |  | 100% |  | 2026-05-15 | 2026-05-15 | 1d |  |  | start no earlier than 2026-05-15 | Hasegawa Kunio; Amano Shigeru; Kikuchi Rie [50%]; Sugiyama Toru | 28h | 28h | 44 | 44 | 44 | Program Management |  |
| 10 | 1.5.4 | Steering Committee #4 |  | 1d | 2026-08-17 A | 2026-08-17 A |  | 100% |  | 2026-08-17 | 2026-08-17 | 1d |  |  | start no earlier than 2026-08-14 | Hasegawa Kunio; Amano Shigeru; Kikuchi Rie [50%]; Sugiyama Toru | 28h | 28h | 44 | 44 | 44 | Program Management |  |
| 11 | 1.5.5 | Steering Committee #5 |  | 1d | 2026-11-13 | 2026-11-13 |  |  |  | 2026-11-13 | 2026-11-13 | 1d | 292d |  | start no earlier than 2026-11-13 | Hasegawa Kunio; Amano Shigeru; Kikuchi Rie [50%]; Sugiyama Toru | 28h |  | 44 | 44 |  | Program Management |  |
| 12 | 1.5.6 | Steering Committee #6 |  | 1d | 2027-02-12 | 2027-02-12 |  |  |  | 2027-02-12 | 2027-02-12 | 1d | 234d |  | start no earlier than 2027-02-12 | Hasegawa Kunio; Amano Shigeru; Kikuchi Rie [50%]; Sugiyama Toru | 28h |  | 44 | 44 |  | Program Management |  |
| 13 | 1.5.7 | Steering Committee #7 |  | 1d | 2027-05-14 | 2027-05-14 |  |  |  | 2027-05-14 | 2027-05-14 | 1d | 175d |  | start no earlier than 2027-05-14 | Hasegawa Kunio; Amano Shigeru; Kikuchi Rie [50%]; Sugiyama Toru | 28h |  | 44 | 44 |  | Program Management |  |
| 14 | 1.5.8 | Steering Committee #8 |  | 1d | 2027-08-16 | 2027-08-16 |  |  |  | 2027-08-16 | 2027-08-16 | 1d | 112d |  | start no earlier than 2027-08-13 | Hasegawa Kunio; Amano Shigeru; Kikuchi Rie [50%]; Sugiyama Toru | 28h |  | 44 | 44 |  | Program Management |  |
| 15 | 1.5.9 | Steering Committee #9 |  | 1d | 2027-11-12 | 2027-11-12 |  |  |  | 2027-11-12 | 2027-11-12 | 1d | 52d |  | start no earlier than 2027-11-12 | Hasegawa Kunio; Amano Shigeru; Kikuchi Rie [50%]; Sugiyama Toru | 28h |  | 44 | 44 |  | Program Management |  |
| 16 | 2 | **Program Initiation** |  | 113d | 2025-10-01 A | 2026-03-24 A |  | 100% |  | 2025-10-01 | 2026-03-13 | 107d |  |  |  |  | 1758.4h | 1758.4h | 70,850.96 | 70,746.8 | 70,850.96 |  |  |
| 17 | 2.1 | Business Case Validation |  | 15d | 2025-10-01 A | 2025-10-22 A |  | 100% |  | 2025-10-01 | 2025-10-22 | 15d |  |  |  | Hasegawa Kunio [30%]; Amano Shigeru [80%]; Sugiyama Toru [50%] | 192h | 192h | 309 | 309 | 309 | Program Management |  |
| 18 | 2.2 | Program Scope Definition |  | 10d | 2025-10-23 A | 2025-11-06 A | 17 | 100% |  | 2025-10-23 | 2025-11-06 | 10d |  |  |  | Amano Shigeru; Sugiyama Toru [80%] | 144h | 144h | 220.8 | 220.8 | 220.8 | Program Management |  |
| 19 | 2.3 | Package Fit Assessment |  | 15d | 2025-11-07 A | 2025-11-28 A | 18 | 100% |  | 2025-11-07 | 2025-11-28 | 15d |  |  |  | Sugiyama Toru [80%]; Onodera Masaki | 216h | 216h | 325.2 | 325.2 | 325.2 | Program Management |  |
| 20 | 2.4 | RFP Preparation and Release |  | 15d | 2025-12-01 A | 2025-12-19 A | 19 | 100% |  | 2025-12-01 | 2025-12-19 | 15d |  |  |  | Amano Shigeru [60%]; Sugiyama Toru; Kikuchi Rie [50%] | 252h | 252h | 355.2 | 355.2 | 355.2 | Program Management |  |
| 21 | 2.5 | Vendor Proposal Evaluation |  | 20d | 2025-12-22 A | 2026-01-26 A | 20 | 100% |  | 2025-12-22 | 2026-01-26 | 20d |  |  |  | Hasegawa Kunio [20%]; Amano Shigeru [80%]; Sugiyama Toru; Onodera Masaki [50%] | 400h | 400h | 621.6 | 621.6 | 621.6 | Program Management |  |
| 22 | 2.6 | Contract Negotiation |  | 21d | 2026-01-27 A | 2026-02-26 A | 21 | 100% |  | 2026-01-27 | 2026-02-17 | 15d |  |  |  | Hasegawa Kunio [30%]; Amano Shigeru | 218.4h | 218.4h | 364.56 | 260.4 | 364.56 | Program Management |  |
| 23 | 2.7 | Contract Signed | milestone | 0d | 2026-02-26 A | 2026-02-26 A | 22 | 100% |  | 2026-02-17 | 2026-02-17 | 0d |  |  |  | SI Partner Fixed Fee |  |  | 42,000 | 42,000 | 42,000 | Program Management |  |
| 24 | 2.8 | ERP License Procurement |  | 10d | 2026-02-27 A | 2026-03-12 A | 23 | 100% |  | 2026-02-18 | 2026-03-04 | 10d |  |  |  | Sugiyama Toru [30%]; ERP Software License | 24h | 24h | 26,034.8 | 26,034.8 | 26,034.8 | Program Management |  |
| 25 | 2.9 | Team Mobilization |  | 15d | 2026-02-27 A | 2026-03-19 A | 23 | 100% |  | 2026-02-18 | 2026-03-11 | 15d |  |  |  | Amano Shigeru [50%]; Kikuchi Rie [80%]; Sugiyama Toru [50%] | 216h | 216h | 288.6 | 288.6 | 288.6 | Program Management |  |
| 26 | 2.10 | Program Kickoff |  | 2d | 2026-03-23 A | 2026-03-24 A | 25, 3 | 100% |  | 2026-03-12 | 2026-03-13 | 2d |  |  |  | Hasegawa Kunio; Amano Shigeru; Kikuchi Rie; Sugiyama Toru; Onodera Masaki; Okazaki Ren (SI Partner); Travel and Expenses | 96h | 96h | 331.2 | 331.2 | 331.2 | Program Management |  |
| 27 | 2.11 | Program Started | milestone | 0d | 2026-03-24 A | 2026-03-24 A | 26 | 100% |  | 2026-03-13 | 2026-03-13 | 0d |  |  |  |  |  |  |  |  |  | Program Management |  |

Notes:
- 22: Negotiation of the fixed-price scope for the realization phase took three weeks longer than planned.

| ID | WBS | Task | Type | Duration | Start | Finish | Predecessors | Complete | Remaining | Baseline start | Baseline finish | Baseline duration | Total slack | Free slack | Resources | Work | Actual work | Cost | Baseline cost | Actual cost | Team | Deliverable |
| --- | --- | --- | --- | --- | --- | --- | --- | --- | --- | --- | --- | --- | --- | --- | --- | --- | --- | --- | --- | --- | --- | --- |
| 28 | 3 | **Technical Architecture and Infrastructure** |  | 113d | 2026-03-25 A | 2026-09-09 |  | 89% | 12.43d | 2026-03-16 | 2026-09-01 | 113d | -16d | 0d |  | 2133.6h | 1953.6h | 17,492.52 | 17,492.52 | 17,241.24 |  |  |
| 29 | 3.1 | Technical Architecture Design |  | 20d | 2026-03-25 A | 2026-04-21 A | 27 | 100% |  | 2026-03-16 | 2026-04-13 | 20d |  |  | Onodera Masaki; Okazaki Ren (SI Partner); Sugiyama Toru [30%] | 368h | 368h | 613.6 | 613.6 | 613.6 | Infrastructure |  |
| 30 | 3.2 | Sizing and Capacity Planning |  | 10d | 2026-04-22 A | 2026-05-11 A | 29 | 100% |  | 2026-04-14 | 2026-04-27 | 10d |  |  | Onodera Masaki [50%]; Tanigawa Osamu | 120h | 120h | 170 | 170 | 170 | Infrastructure |  |
| 31 | 3.3 | Network and WAN Design |  | 12d | 2026-04-22 A | 2026-05-13 A | 29 | 100% |  | 2026-04-14 | 2026-04-30 | 12d |  |  | Segawa Toshiki | 96h | 96h | 115.2 | 115.2 | 115.2 | Infrastructure |  |
| 32 | 3.4 | Security and Authorization Concept |  | 15d | 2026-04-22 A | 2026-05-18 A | 29 | 100% |  | 2026-04-14 | 2026-05-08 | 15d |  |  | Tomita Rui; Kaneko Hina [50%]; Onodera Masaki [30%] | 216h | 216h | 313.8 | 313.8 | 313.8 | Security |  |
| 33 | 3.5 | Hardware and Cloud Procurement |  | 25d | 2026-05-12 A | 2026-06-15 A | 30 | 100% |  | 2026-04-28 | 2026-06-05 | 25d |  |  | Tanigawa Osamu [40%]; Sugiyama Toru [20%]; Hardware and Cloud Platform | 120h | 120h | 14,666 | 14,666 | 14,666 | Infrastructure |  |
| 34 | 3.6 | Sandbox System Build |  | 10d | 2026-04-22 A | 2026-05-11 A | 24, 29 | 100% |  | 2026-04-14 | 2026-04-27 | 10d |  |  | Tanigawa Osamu; Fukui Kanade [50%] | 120h | 120h | 156 | 156 | 156 | Infrastructure |  |
| 35 | 3.7 | Development System Build |  | 12d | 2026-06-16 A | 2026-07-01 A | 33, 34 | 100% |  | 2026-06-08 | 2026-06-23 | 12d |  |  | Tanigawa Osamu; Fukui Kanade | 192h | 192h | 244.8 | 244.8 | 244.8 | Infrastructure |  |
| 36 | 3.8 | QA System Build |  | 12d | 2026-07-02 A | 2026-07-17 A | 35 | 100% |  | 2026-06-24 | 2026-07-09 | 12d |  |  | Fukui Kanade; Okazaki Ren (SI Partner) [30%] | 124.8h | 124.8h | 168.48 | 168.48 | 168.48 | Infrastructure |  |
| 37 | 3.9 | Production System Build |  | 18d | 2026-07-21 A | 2026-08-18 A | 36 | 100% |  | 2026-07-10 | 2026-08-05 | 18d |  |  | Tanigawa Osamu; Fukui Kanade [80%]; Okazaki Ren (SI Partner) [30%] | 302.4h | 302.4h | 412.56 | 412.56 | 412.56 | Infrastructure |  |
| 38 | 3.10 | Disaster Recovery Site Build |  | 15d | 2026-08-19 A | 2026-09-08 | 37 | 40% | 9d | 2026-08-06 | 2026-08-31 | 15d | -15d | 1d | Tanigawa Osamu [60%]; Segawa Toshiki [50%] | 132h | 52.8h | 169.2 | 169.2 | 67.68 | Infrastructure |  |
| 39 | 3.11 | Transport Route and Change Control Setup |  | 6d | 2026-07-21 A | 2026-07-28 A | 36 | 100% |  | 2026-07-10 | 2026-07-17 | 6d |  |  | Fukui Kanade [60%] | 28.8h | 28.8h | 34.56 | 34.56 | 34.56 | Infrastructure |  |
| 40 | 3.12 | Backup and Restore Design |  | 8d | 2026-07-28 A | 2026-08-06 A | 37SS+5d | 100% |  | 2026-07-17 | 2026-07-29 | 8d |  |  | Tanigawa Osamu [50%] | 32h | 32h | 43.2 | 43.2 | 43.2 | Infrastructure |  |
| 41 | 3.13 | System Monitoring Setup |  | 8d | 2026-08-19 A | 2026-08-28 | 37 | 75% | 2d | 2026-08-06 | 2026-08-20 | 8d | -8d | 8d | Fukui Kanade [60%]; Segawa Toshiki [30%] | 57.6h | 43.2h | 69.12 | 69.12 | 51.84 | Infrastructure |  |
| 42 | 3.14 | Identity Management Integration |  | 10d | 2026-07-21 A | 2026-08-03 A | 32, 36 | 100% |  | 2026-07-10 | 2026-07-24 | 10d |  |  | Kaneko Hina [50%]; Fukui Kanade [50%] | 80h | 80h | 100 | 100 | 100 | Security |  |
| 43 | 3.15 | Security Hardening |  | 10d | 2026-08-19 A | 2026-09-01 | 37, 42 | 60% | 4d | 2026-08-06 | 2026-08-24 | 10d | -16d | 0d | Tomita Rui [80%]; Tanigawa Osamu [40%] | 96h | 57.6h | 139.2 | 139.2 | 83.52 | Security |  |
| 44 | 3.16 | Performance Baseline Measurement |  | 6d | 2026-09-02 | 2026-09-09 | 43 |  |  | 2026-08-25 | 2026-09-01 | 6d | -16d | 0d | Tanigawa Osamu [50%]; Okazaki Ren (SI Partner) [50%] | 48h |  | 76.8 | 76.8 |  | Infrastructure |  |
| 45 | 3.17 | Technical Readiness Confirmed | milestone | 0d | 2026-09-09 | 2026-09-09 | 44, 41, 40, 38, 39 |  |  | 2026-09-01 | 2026-09-01 | 0d | -16d | 0d |  |  |  |  |  |  | Infrastructure |  |
| 46 | 4 | **Business Blueprint** |  | 73.5d | 2026-03-25 A | 2026-07-10 A |  | 100% |  | 2026-03-16 | 2026-06-29 | 71d |  |  |  | 4992h | 4992h | 6,759.4 | 6,666.6 | 6,759.4 |  |  |
| 47 | 4.1 | Blueprint Preparation and Workshop Planning |  | 8d | 2026-03-25 A | 2026-04-03 A | 27 | 100% |  | 2026-03-16 | 2026-03-26 | 8d |  |  | Amano Shigeru [30%]; Okazaki Ren (SI Partner) [50%]; Yokota Kei [50%] | 83.2h | 83.2h | 118.72 | 118.72 | 118.72 | Business Blueprint |  |
| 48 | 4.2 | **Blueprint - Finance and Controlling** |  | 58d | 2026-04-06 A | 2026-06-30 A |  | 100% |  | 2026-03-27 | 2026-06-22 | 58d |  |  |  | 1191.2h | 1191.2h | 1,607.12 | 1,607.12 | 1,607.12 |  |  |
| 49 | 4.2.1 | As-Is Process Documentation - Finance and Controlling |  | 12d | 2026-04-06 A | 2026-04-21 A | 47 | 100% |  | 2026-03-27 | 2026-04-13 | 12d |  |  | Ito Naoko; Finance Key Users; Baba Toshio (SI Partner) [50%] | 240h | 240h | 285.6 | 285.6 | 285.6 | Business Blueprint |  |
| 50 | 4.2.2 | Fit / Gap Workshops - Finance and Controlling |  | 15d | 2026-04-22 A | 2026-05-18 A | 49 | 100% |  | 2026-04-14 | 2026-05-08 | 15d |  |  | Baba Toshio (SI Partner); Ito Naoko; Finance Key Users [150%]; Travel and Expenses | 420h | 420h | 600 | 600 | 600 | Business Blueprint |  |
| 51 | 4.2.3 | To-Be Process Design - Finance and Controlling |  | 15d | 2026-05-19 A | 2026-06-08 A | 50 | 100% |  | 2026-05-11 | 2026-05-29 | 15d |  |  | Baba Toshio (SI Partner); Ito Naoko; Finance Key Users [80%] | 336h | 336h | 442.8 | 442.8 | 442.8 | Business Blueprint |  |
| 52 | 4.2.4 | Gap Resolution Decision - Finance and Controlling |  | 6d | 2026-06-09 A | 2026-06-16 A | 51 | 100% |  | 2026-06-01 | 2026-06-08 | 6d |  |  | Ito Naoko [80%]; Onodera Masaki [30%]; Sugiyama Toru [30%] | 67.2h | 67.2h | 93.12 | 93.12 | 93.12 | Business Blueprint |  |
| 53 | 4.2.5 | Blueprint Document - Finance and Controlling |  | 10d | 2026-06-17 A | 2026-06-30 A | 52 | 100% |  | 2026-06-09 | 2026-06-22 | 10d |  |  | Baba Toshio (SI Partner) [80%]; Ito Naoko [50%]; Yokota Kei [30%] | 128h | 128h | 185.6 | 185.6 | 185.6 | Business Blueprint | Business Blueprint |
| 54 | 4.2.6 | Blueprint Sign-off - Finance and Controlling | milestone | 0d | 2026-06-30 A | 2026-06-30 A | 53 | 100% |  | 2026-06-22 | 2026-06-22 | 0d |  |  |  |  |  |  |  |  | Business Blueprint |  |

Notes:
- 33: Delivery lead time for the storage subsystem is 12 weeks from order.

| ID | WBS | Task | Type | Duration | Start | Finish | Predecessors | Complete | Remaining | Baseline start | Baseline finish | Baseline duration | Total slack | Free slack | Deadline | Resources | Work | Actual work | Cost | Baseline cost | Actual cost | Team | Deliverable |
| --- | --- | --- | --- | --- | --- | --- | --- | --- | --- | --- | --- | --- | --- | --- | --- | --- | --- | --- | --- | --- | --- | --- | --- |
| 55 | 4.3 | **Blueprint - Procurement and Inventory** |  | 58d | 2026-04-06 A | 2026-06-30 A |  | 100% |  | 2026-03-27 | 2026-06-22 | 58d |  |  |  |  | 1191.2h | 1191.2h | 1,607.12 | 1,607.12 | 1,607.12 |  |  |
| 56 | 4.3.1 | As-Is Process Documentation - Procurement and Inventory |  | 12d | 2026-04-06 A | 2026-04-21 A | 47 | 100% |  | 2026-03-27 | 2026-04-13 | 12d |  |  |  | Murakami Jin; Procurement Key Users; Kurihara Mei (SI Partner) [50%] | 240h | 240h | 285.6 | 285.6 | 285.6 | Business Blueprint |  |
| 57 | 4.3.2 | Fit / Gap Workshops - Procurement and Inventory |  | 15d | 2026-04-22 A | 2026-05-18 A | 56 | 100% |  | 2026-04-14 | 2026-05-08 | 15d |  |  |  | Kurihara Mei (SI Partner); Murakami Jin; Procurement Key Users [150%]; Travel and Expenses | 420h | 420h | 600 | 600 | 600 | Business Blueprint |  |
| 58 | 4.3.3 | To-Be Process Design - Procurement and Inventory |  | 15d | 2026-05-19 A | 2026-06-08 A | 57 | 100% |  | 2026-05-11 | 2026-05-29 | 15d |  |  |  | Kurihara Mei (SI Partner); Murakami Jin; Procurement Key Users [80%] | 336h | 336h | 442.8 | 442.8 | 442.8 | Business Blueprint |  |
| 59 | 4.3.4 | Gap Resolution Decision - Procurement and Inventory |  | 6d | 2026-06-09 A | 2026-06-16 A | 58 | 100% |  | 2026-06-01 | 2026-06-08 | 6d |  |  |  | Murakami Jin [80%]; Onodera Masaki [30%]; Sugiyama Toru [30%] | 67.2h | 67.2h | 93.12 | 93.12 | 93.12 | Business Blueprint |  |
| 60 | 4.3.5 | Blueprint Document - Procurement and Inventory |  | 10d | 2026-06-17 A | 2026-06-30 A | 59 | 100% |  | 2026-06-09 | 2026-06-22 | 10d |  |  |  | Kurihara Mei (SI Partner) [80%]; Murakami Jin [50%]; Yokota Kei [30%] | 128h | 128h | 185.6 | 185.6 | 185.6 | Business Blueprint | Business Blueprint |
| 61 | 4.3.6 | Blueprint Sign-off - Procurement and Inventory | milestone | 0d | 2026-06-30 A | 2026-06-30 A | 60 | 100% |  | 2026-06-22 | 2026-06-22 | 0d |  |  |  |  |  |  |  |  |  | Business Blueprint |  |
| 62 | 4.4 | **Blueprint - Production Planning** |  | 60.5d | 2026-04-06 A | 2026-07-03 A |  | 100% |  | 2026-03-27 | 2026-06-22 | 58d |  |  |  |  | 1223.2h | 1223.2h | 1,653.52 | 1,607.12 | 1,653.52 |  |  |
| 63 | 4.4.1 | As-Is Process Documentation - Production Planning |  | 12d | 2026-04-06 A | 2026-04-21 A | 47 | 100% |  | 2026-03-27 | 2026-04-13 | 12d |  |  |  | Kanda Shohei; Production Key Users; Sonoda Takumi (SI Partner) [50%] | 240h | 240h | 285.6 | 285.6 | 285.6 | Business Blueprint |  |
| 64 | 4.4.2 | Fit / Gap Workshops - Production Planning |  | 15d | 2026-04-22 A | 2026-05-18 A | 63 | 100% |  | 2026-04-14 | 2026-05-08 | 15d |  |  |  | Sonoda Takumi (SI Partner); Kanda Shohei; Production Key Users [150%]; Travel and Expenses | 420h | 420h | 600 | 600 | 600 | Business Blueprint |  |
| 65 | 4.4.3 | To-Be Process Design - Production Planning |  | 15d | 2026-05-19 A | 2026-06-08 A | 64 | 100% |  | 2026-05-11 | 2026-05-29 | 15d |  |  |  | Sonoda Takumi (SI Partner); Kanda Shohei; Production Key Users [80%] | 336h | 336h | 442.8 | 442.8 | 442.8 | Business Blueprint |  |
| 66 | 4.4.4 | Gap Resolution Decision - Production Planning |  | 6d | 2026-06-09 A | 2026-06-16 A | 65 | 100% |  | 2026-06-01 | 2026-06-08 | 6d |  |  |  | Kanda Shohei [80%]; Onodera Masaki [30%]; Sugiyama Toru [30%] | 67.2h | 67.2h | 93.12 | 93.12 | 93.12 | Business Blueprint |  |
| 67 | 4.4.5 | Blueprint Document - Production Planning |  | 12.5d | 2026-06-17 A | 2026-07-03 A | 66 | 100% |  | 2026-06-09 | 2026-06-22 | 10d |  |  |  | Sonoda Takumi (SI Partner) [80%]; Kanda Shohei [50%]; Yokota Kei [30%] | 160h | 160h | 232 | 185.6 | 232 | Business Blueprint | Business Blueprint |
| 68 | 4.4.6 | Blueprint Sign-off - Production Planning | milestone | 0d | 2026-07-03 A | 2026-07-03 A | 67 | 100% |  | 2026-06-22 | 2026-06-22 | 0d |  |  |  |  |  |  |  |  |  | Business Blueprint |  |
| 69 | 4.5 | **Blueprint - Sales and Distribution** |  | 60.5d | 2026-04-06 A | 2026-07-03 A |  | 100% |  | 2026-03-27 | 2026-06-22 | 58d |  |  |  |  | 1223.2h | 1223.2h | 1,653.52 | 1,607.12 | 1,653.52 |  |  |
| 70 | 4.5.1 | As-Is Process Documentation - Sales and Distribution |  | 12d | 2026-04-06 A | 2026-04-21 A | 47 | 100% |  | 2026-03-27 | 2026-04-13 | 12d |  |  |  | Yamashita Aki; Sales Key Users; Handa Yuri (SI Partner) [50%] | 240h | 240h | 285.6 | 285.6 | 285.6 | Business Blueprint |  |
| 71 | 4.5.2 | Fit / Gap Workshops - Sales and Distribution |  | 15d | 2026-04-22 A | 2026-05-18 A | 70 | 100% |  | 2026-04-14 | 2026-05-08 | 15d |  |  |  | Handa Yuri (SI Partner); Yamashita Aki; Sales Key Users [150%]; Travel and Expenses | 420h | 420h | 600 | 600 | 600 | Business Blueprint |  |
| 72 | 4.5.3 | To-Be Process Design - Sales and Distribution |  | 15d | 2026-05-19 A | 2026-06-08 A | 71 | 100% |  | 2026-05-11 | 2026-05-29 | 15d |  |  |  | Handa Yuri (SI Partner); Yamashita Aki; Sales Key Users [80%] | 336h | 336h | 442.8 | 442.8 | 442.8 | Business Blueprint |  |
| 73 | 4.5.4 | Gap Resolution Decision - Sales and Distribution |  | 6d | 2026-06-09 A | 2026-06-16 A | 72 | 100% |  | 2026-06-01 | 2026-06-08 | 6d |  |  |  | Yamashita Aki [80%]; Onodera Masaki [30%]; Sugiyama Toru [30%] | 67.2h | 67.2h | 93.12 | 93.12 | 93.12 | Business Blueprint |  |
| 74 | 4.5.5 | Blueprint Document - Sales and Distribution |  | 12.5d | 2026-06-17 A | 2026-07-03 A | 73 | 100% |  | 2026-06-09 | 2026-06-22 | 10d |  |  |  | Handa Yuri (SI Partner) [80%]; Yamashita Aki [50%]; Yokota Kei [30%] | 160h | 160h | 232 | 185.6 | 232 | Business Blueprint | Business Blueprint |
| 75 | 4.5.6 | Blueprint Sign-off - Sales and Distribution | milestone | 0d | 2026-07-03 A | 2026-07-03 A | 74 | 100% |  | 2026-06-22 | 2026-06-22 | 0d |  |  |  |  |  |  |  |  |  | Business Blueprint |  |
| 76 | 4.6 | Blueprint Quality Gate |  | 5d | 2026-07-03 A | 2026-07-10 A | 54, 61, 68, 75 | 100% |  | 2026-06-23 | 2026-06-29 | 5d |  |  |  | Hasegawa Kunio [20%]; Amano Shigeru [80%]; Kikuchi Rie [50%]; Onodera Masaki [50%] | 80h | 80h | 119.4 | 119.4 | 119.4 | Program Management |  |
| 77 | 4.7 | Blueprint Phase Complete | milestone | 0d | 2026-07-10 A | 2026-07-10 A | 76 | 100% |  | 2026-06-29 | 2026-06-29 | 0d |  |  | 2026-06-29 |  |  |  |  |  |  | Business Blueprint |  |
| 78 | 5 | **Realization** |  | 116d | 2026-07-01 A | 2026-12-22 |  | 25% | 87d | 2026-06-23 | 2026-12-07 | 111d | -16d | 0d |  |  | 8332h | 2228.93h | 10,470.64 | 10,242.24 | 2,543.07 |  |  |
| 79 | 5.1 | **Realization - Finance and Controlling** |  | 116d | 2026-07-01 A | 2026-12-22 |  | 25% | 87d | 2026-06-23 | 2026-12-07 | 111d | -16d | 0d |  |  | 2224h | 586.95h | 2,788.96 | 2,560.56 | 666.64 |  |  |
| 80 | 5.1.1 | Baseline Configuration - Finance and Controlling |  | 20d | 2026-09-10 | 2026-10-09 | 54, 45 |  |  | 2026-09-02 | 2026-10-01 | 20d | -16d | 0d |  | Baba Toshio (SI Partner); Ito Naoko [50%] | 240h |  | 384 | 384 |  | Configuration |  |
| 81 | 5.1.2 | Master Data Design - Finance and Controlling |  | 12d | 2026-09-17 | 2026-10-06 | 80SS+5d |  |  | 2026-09-09 | 2026-09-28 | 12d | -13d | 3d |  | Ito Naoko [60%]; Finance Key Users [80%]; Hoshino Kaori [30%] | 163.2h |  | 173.76 | 173.76 |  | Configuration |  |
| 82 | 5.1.3 | Authorization Role Design - Finance and Controlling |  | 10d | 2026-10-13 | 2026-10-26 | 80, 32 |  |  | 2026-10-02 | 2026-10-16 | 10d | 8d | 24d |  | Kaneko Hina [40%]; Ito Naoko [30%]; Baba Toshio (SI Partner) [30%] | 80h |  | 114.8 | 114.8 |  | Security |  |
| 83 | 5.1.4 | Final Configuration - Finance and Controlling |  | 30d | 2026-10-13 | 2026-11-25 | 80, 81 |  |  | 2026-10-02 | 2026-11-09 | 25d | -16d | 0d |  | Baba Toshio (SI Partner); Ito Naoko [80%]; Finance Key Users [50%] | 552h |  | 765.6 | 638 |  | Configuration |  |
| 84 | 5.1.5 | RICEFW Specification - Finance and Controlling |  | 15d | 2026-07-01 A | 2026-07-22 A | 54 | 100% |  | 2026-06-23 | 2026-07-13 | 15d |  |  |  | Baba Toshio (SI Partner) [50%]; Aoki Sota; Ito Naoko [30%] | 216h | 216h | 277.8 | 277.8 | 277.8 | Development | Functional Specification |
| 85 | 5.1.6 | Add-on Development - Finance and Controlling |  | 36d | 2026-07-23 A | 2026-09-15 | 84, 35 | 61% | 14.04d | 2026-07-14 | 2026-08-28 | 30d | 38d | 0d |  | Aoki Sota; Ikeda Nanami | 576h | 351.37h | 604.8 | 504 | 368.93 | Development |  |
| 86 | 5.1.7 | Unit Test - Finance and Controlling |  | 12d | 2026-08-25 A | 2026-09-09 | 85SS+20d | 17% | 9.96d | 2026-08-17 | 2026-09-01 | 12d | 38d | 54d |  | Ikeda Nanami [80%]; Terada Yuma [40%] | 115.2h | 19.58h | 117.12 | 117.12 | 19.91 | Testing |  |
| 87 | 5.1.8 | Playback Session - Finance and Controlling |  | 4d | 2026-11-26 | 2026-12-01 | 83 |  |  | 2026-11-10 | 2026-11-13 | 4d | -16d | 0d |  | Ito Naoko [80%]; Finance Key Users [150%]; Baba Toshio (SI Partner) [50%] | 89.6h |  | 99.68 | 99.68 |  | Configuration |  |
| 88 | 5.1.9 | Module Integration Test - Finance and Controlling |  | 15d | 2026-12-02 | 2026-12-22 | 86, 87, 82 |  |  | 2026-11-16 | 2026-12-07 | 15d | -16d | 0d |  | Terada Yuma [60%]; Ito Naoko [50%]; Baba Toshio (SI Partner) [50%] | 192h |  | 251.4 | 251.4 |  | Testing |  |
| 89 | 5.1.10 | Module Ready - Finance and Controlling | milestone | 0d | 2026-12-22 | 2026-12-22 | 88 |  |  | 2026-12-07 | 2026-12-07 | 0d | -16d | 0d |  |  |  |  |  |  |  | Configuration |  |

| ID | WBS | Task | Type | Duration | Start | Finish | Predecessors | Complete | Remaining | Baseline start | Baseline finish | Baseline duration | Total slack | Free slack | Resources | Work | Actual work | Cost | Baseline cost | Actual cost | Team | Deliverable |
| --- | --- | --- | --- | --- | --- | --- | --- | --- | --- | --- | --- | --- | --- | --- | --- | --- | --- | --- | --- | --- | --- | --- |
| 90 | 5.2 | **Realization - Procurement and Inventory** |  | 111d | 2026-07-01 A | 2026-12-15 |  | 27% | 81.03d | 2026-06-23 | 2026-12-07 | 111d | -11d | 0d |  | 2036h | 585.98h | 2,560.56 | 2,560.56 | 665.63 |  |  |
| 91 | 5.2.1 | Baseline Configuration - Procurement and Inventory |  | 20d | 2026-09-10 | 2026-10-09 | 61, 45 |  |  | 2026-09-02 | 2026-10-01 | 20d | -11d | 0d | Kurihara Mei (SI Partner); Murakami Jin [50%] | 240h |  | 384 | 384 |  | Configuration |  |
| 92 | 5.2.2 | Master Data Design - Procurement and Inventory |  | 12d | 2026-09-17 | 2026-10-06 | 91SS+5d |  |  | 2026-09-09 | 2026-09-28 | 12d | -8d | 3d | Murakami Jin [60%]; Procurement Key Users [80%]; Hoshino Kaori [30%] | 163.2h |  | 173.76 | 173.76 |  | Configuration |  |
| 93 | 5.2.3 | Authorization Role Design - Procurement and Inventory |  | 10d | 2026-10-13 | 2026-10-26 | 91, 32 |  |  | 2026-10-02 | 2026-10-16 | 10d | 8d | 19d | Kaneko Hina [40%]; Murakami Jin [30%]; Kurihara Mei (SI Partner) [30%] | 80h |  | 114.8 | 114.8 |  | Security |  |
| 94 | 5.2.4 | Final Configuration - Procurement and Inventory |  | 25d | 2026-10-13 | 2026-11-17 | 91, 92 |  |  | 2026-10-02 | 2026-11-09 | 25d | -11d | 0d | Kurihara Mei (SI Partner); Murakami Jin [80%]; Procurement Key Users [50%] | 460h |  | 638 | 638 |  | Configuration |  |
| 95 | 5.2.5 | RICEFW Specification - Procurement and Inventory |  | 15d | 2026-07-01 A | 2026-07-22 A | 61 | 100% |  | 2026-06-23 | 2026-07-13 | 15d |  |  | Kurihara Mei (SI Partner) [50%]; Uchida Kohei; Murakami Jin [30%] | 216h | 216h | 277.8 | 277.8 | 277.8 | Development | Functional Specification |
| 96 | 5.2.6 | Add-on Development - Procurement and Inventory |  | 30d | 2026-07-23 A | 2026-09-07 | 95, 35 | 73% | 8.1d | 2026-07-14 | 2026-08-28 | 30d | 38d | 0d | Uchida Kohei; Enomoto Mio | 480h | 350.4h | 504 | 504 | 367.92 | Development |  |
| 97 | 5.2.7 | Unit Test - Procurement and Inventory |  | 12d | 2026-08-25 A | 2026-09-09 | 96SS+20d | 17% | 9.96d | 2026-08-17 | 2026-09-01 | 12d | 38d | 49d | Enomoto Mio [80%]; Terada Yuma [40%] | 115.2h | 19.58h | 117.12 | 117.12 | 19.91 | Testing |  |
| 98 | 5.2.8 | Playback Session - Procurement and Inventory |  | 4d | 2026-11-18 | 2026-11-24 | 94 |  |  | 2026-11-10 | 2026-11-13 | 4d | -11d | 0d | Murakami Jin [80%]; Procurement Key Users [150%]; Kurihara Mei (SI Partner) [50%] | 89.6h |  | 99.68 | 99.68 |  | Configuration |  |
| 99 | 5.2.9 | Module Integration Test - Procurement and Inventory |  | 15d | 2026-11-25 | 2026-12-15 | 97, 98, 93 |  |  | 2026-11-16 | 2026-12-07 | 15d | -11d | 0d | Terada Yuma [60%]; Murakami Jin [50%]; Kurihara Mei (SI Partner) [50%] | 192h |  | 251.4 | 251.4 |  | Testing |  |
| 100 | 5.2.10 | Module Ready - Procurement and Inventory | milestone | 0d | 2026-12-15 | 2026-12-15 | 99 |  |  | 2026-12-07 | 2026-12-07 | 0d | -11d | 5d |  |  |  |  |  |  | Configuration |  |
| 101 | 5.3 | **Realization - Production Planning** |  | 108.5d | 2026-07-03 A | 2026-12-15 |  | 24% | 82.46d | 2026-06-23 | 2026-12-07 | 111d | -11d | 0d |  | 2036h | 528h | 2,560.56 | 2,560.56 | 605.4 |  |  |
| 102 | 5.3.1 | Baseline Configuration - Production Planning |  | 20d | 2026-09-10 | 2026-10-09 | 68, 45 |  |  | 2026-09-02 | 2026-10-01 | 20d | -11d | 0d | Sonoda Takumi (SI Partner); Kanda Shohei [50%] | 240h |  | 384 | 384 |  | Configuration |  |
| 103 | 5.3.2 | Master Data Design - Production Planning |  | 12d | 2026-09-17 | 2026-10-06 | 102SS+5d |  |  | 2026-09-09 | 2026-09-28 | 12d | -8d | 3d | Kanda Shohei [60%]; Production Key Users [80%]; Hoshino Kaori [30%] | 163.2h |  | 173.76 | 173.76 |  | Configuration |  |
| 104 | 5.3.3 | Authorization Role Design - Production Planning |  | 10d | 2026-10-13 | 2026-10-26 | 102, 32 |  |  | 2026-10-02 | 2026-10-16 | 10d | 8d | 19d | Kaneko Hina [40%]; Kanda Shohei [30%]; Sonoda Takumi (SI Partner) [30%] | 80h |  | 114.8 | 114.8 |  | Security |  |
| 105 | 5.3.4 | Final Configuration - Production Planning |  | 25d | 2026-10-13 | 2026-11-17 | 102, 103 |  |  | 2026-10-02 | 2026-11-09 | 25d | -11d | 0d | Sonoda Takumi (SI Partner); Kanda Shohei [80%]; Production Key Users [50%] | 460h |  | 638 | 638 |  | Configuration |  |
| 106 | 5.3.5 | RICEFW Specification - Production Planning |  | 15d | 2026-07-03 A | 2026-07-27 A | 68 | 100% |  | 2026-06-23 | 2026-07-13 | 15d |  |  | Sonoda Takumi (SI Partner) [50%]; Okamoto Riku; Kanda Shohei [30%] | 216h | 216h | 277.8 | 277.8 | 277.8 | Development | Functional Specification |
| 107 | 5.3.6 | Add-on Development - Production Planning |  | 30d | 2026-07-27 A | 2026-09-10 | 106, 35 | 65% | 10.5d | 2026-07-14 | 2026-08-28 | 30d | 35.5d | 0d | Okamoto Riku; Kashiwagi Sae | 480h | 312h | 504 | 504 | 327.6 | Development |  |
| 108 | 5.3.7 | Unit Test - Production Planning |  | 12d | 2026-08-27 | 2026-09-14 | 107SS+20d |  |  | 2026-08-17 | 2026-09-01 | 12d | 35.5d | 46.5d | Kashiwagi Sae [80%]; Terada Yuma [40%] | 115.2h |  | 117.12 | 117.12 |  | Testing |  |
| 109 | 5.3.8 | Playback Session - Production Planning |  | 4d | 2026-11-18 | 2026-11-24 | 105 |  |  | 2026-11-10 | 2026-11-13 | 4d | -11d | 0d | Kanda Shohei [80%]; Production Key Users [150%]; Sonoda Takumi (SI Partner) [50%] | 89.6h |  | 99.68 | 99.68 |  | Configuration |  |
| 110 | 5.3.9 | Module Integration Test - Production Planning |  | 15d | 2026-11-25 | 2026-12-15 | 108, 109, 104 |  |  | 2026-11-16 | 2026-12-07 | 15d | -11d | 0d | Terada Yuma [60%]; Kanda Shohei [50%]; Sonoda Takumi (SI Partner) [50%] | 192h |  | 251.4 | 251.4 |  | Testing |  |
| 111 | 5.3.10 | Module Ready - Production Planning | milestone | 0d | 2026-12-15 | 2026-12-15 | 110 |  |  | 2026-12-07 | 2026-12-07 | 0d | -11d | 5d |  |  |  |  |  |  | Configuration |  |
| 112 | 5.4 | **Realization - Sales and Distribution** |  | 108.5d | 2026-07-03 A | 2026-12-15 |  | 24% | 82.46d | 2026-06-23 | 2026-12-07 | 111d | -11d | 0d |  | 2036h | 528h | 2,560.56 | 2,560.56 | 605.4 |  |  |
| 113 | 5.4.1 | Baseline Configuration - Sales and Distribution |  | 20d | 2026-09-10 | 2026-10-09 | 75, 45 |  |  | 2026-09-02 | 2026-10-01 | 20d | -11d | 0d | Handa Yuri (SI Partner); Yamashita Aki [50%] | 240h |  | 384 | 384 |  | Configuration |  |
| 114 | 5.4.2 | Master Data Design - Sales and Distribution |  | 12d | 2026-09-17 | 2026-10-06 | 113SS+5d |  |  | 2026-09-09 | 2026-09-28 | 12d | -8d | 3d | Yamashita Aki [60%]; Sales Key Users [80%]; Hoshino Kaori [30%] | 163.2h |  | 173.76 | 173.76 |  | Configuration |  |
| 115 | 5.4.3 | Authorization Role Design - Sales and Distribution |  | 10d | 2026-10-13 | 2026-10-26 | 113, 32 |  |  | 2026-10-02 | 2026-10-16 | 10d | 8d | 19d | Kaneko Hina [40%]; Yamashita Aki [30%]; Handa Yuri (SI Partner) [30%] | 80h |  | 114.8 | 114.8 |  | Security |  |
| 116 | 5.4.4 | Final Configuration - Sales and Distribution |  | 25d | 2026-10-13 | 2026-11-17 | 113, 114 |  |  | 2026-10-02 | 2026-11-09 | 25d | -11d | 0d | Handa Yuri (SI Partner); Yamashita Aki [80%]; Sales Key Users [50%] | 460h |  | 638 | 638 |  | Configuration |  |
| 117 | 5.4.5 | RICEFW Specification - Sales and Distribution |  | 15d | 2026-07-03 A | 2026-07-27 A | 75 | 100% |  | 2026-06-23 | 2026-07-13 | 15d |  |  | Handa Yuri (SI Partner) [50%]; Kuroda Yamato; Yamashita Aki [30%] | 216h | 216h | 277.8 | 277.8 | 277.8 | Development | Functional Specification |
| 118 | 5.4.6 | Add-on Development - Sales and Distribution |  | 30d | 2026-07-27 A | 2026-09-10 | 117, 35 | 65% | 10.5d | 2026-07-14 | 2026-08-28 | 30d | 35.5d | 0d | Kuroda Yamato; Sasaki Hinata | 480h | 312h | 504 | 504 | 327.6 | Development |  |
| 119 | 5.4.7 | Unit Test - Sales and Distribution |  | 12d | 2026-08-27 | 2026-09-14 | 118SS+20d |  |  | 2026-08-17 | 2026-09-01 | 12d | 35.5d | 46.5d | Sasaki Hinata [80%]; Terada Yuma [40%] | 115.2h |  | 117.12 | 117.12 |  | Testing |  |
| 120 | 5.4.8 | Playback Session - Sales and Distribution |  | 4d | 2026-11-18 | 2026-11-24 | 116 |  |  | 2026-11-10 | 2026-11-13 | 4d | -11d | 0d | Yamashita Aki [80%]; Sales Key Users [150%]; Handa Yuri (SI Partner) [50%] | 89.6h |  | 99.68 | 99.68 |  | Configuration |  |
| 121 | 5.4.9 | Module Integration Test - Sales and Distribution |  | 15d | 2026-11-25 | 2026-12-15 | 119, 120, 115 |  |  | 2026-11-16 | 2026-12-07 | 15d | -11d | 0d | Terada Yuma [60%]; Yamashita Aki [50%]; Handa Yuri (SI Partner) [50%] | 192h |  | 251.4 | 251.4 |  | Testing |  |
| 122 | 5.4.10 | Module Ready - Sales and Distribution | milestone | 0d | 2026-12-15 | 2026-12-15 | 121 |  |  | 2026-12-07 | 2026-12-07 | 0d | -11d | 5d |  |  |  |  |  |  | Configuration |  |

| ID | WBS | Task | Type | Duration | Start | Finish | Predecessors | Complete | Remaining | Baseline start | Baseline finish | Baseline duration | Total slack | Free slack | Resources | Work | Actual work | Cost | Baseline cost | Actual cost | Team |
| --- | --- | --- | --- | --- | --- | --- | --- | --- | --- | --- | --- | --- | --- | --- | --- | --- | --- | --- | --- | --- | --- |
| 123 | 6 | **Interfaces and Integration** |  | 151d | 2026-04-22 A | 2026-12-07 |  | 30% | 105.7d | 2026-04-14 | 2026-11-19 | 146d | -5d | 0d |  | 1889.6h | 603.2h | 2,217.68 | 2,217.68 | 774.16 |  |
| 124 | 6.1 | Interface Inventory and Strategy |  | 10d | 2026-04-22 A | 2026-05-11 A | 29 | 100% |  | 2026-04-14 | 2026-04-27 | 10d |  |  | Onodera Masaki [80%]; Okazaki Ren (SI Partner) [50%] | 104h | 104h | 173.2 | 173.2 | 173.2 | Development |
| 125 | 6.2 | **Bank Payment Interface** |  | 105d | 2026-07-01 A | 2026-12-07 |  | 26% | 77.7d | 2026-06-23 | 2026-11-19 | 100d | -5d | 0d |  | 297.6h | 83.2h | 341.28 | 341.28 | 100.16 |  |
| 126 | 6.2.1 | Interface Specification - Bank Payment Interface |  | 8d | 2026-07-01 A | 2026-07-10 A | 124, 54 | 100% |  | 2026-06-23 | 2026-07-02 | 8d |  |  | Onodera Masaki [30%]; Aoki Sota [80%]; Ito Naoko [20%] | 83.2h | 83.2h | 100.16 | 100.16 | 100.16 | Development |
| 127 | 6.2.2 | Interface Development - Bank Payment Interface |  | 15d | 2026-10-13 | 2026-11-02 | 126, 35, 80 |  |  | 2026-10-02 | 2026-10-23 | 15d | 10d | 15d | Aoki Sota; Okazaki Ren (SI Partner) [20%] | 144h |  | 170.4 | 170.4 |  | Development |
| 128 | 6.2.3 | Interface Connection Test - Bank Payment Interface |  | 8d | 2026-11-26 | 2026-12-07 | 127, 36, 83 |  |  | 2026-11-10 | 2026-11-19 | 8d | -5d | 0d | Aoki Sota [60%]; Terada Yuma [50%] | 70.4h |  | 70.72 | 70.72 |  | Testing |
| 129 | 6.3 | **Supplier EDI Interface** |  | 100d | 2026-07-01 A | 2026-11-30 |  | 26% | 74d | 2026-06-23 | 2026-11-19 | 100d | 0d | 5d |  | 297.6h | 83.2h | 341.28 | 341.28 | 100.16 |  |
| 130 | 6.3.1 | Interface Specification - Supplier EDI Interface |  | 8d | 2026-07-01 A | 2026-07-10 A | 124, 61 | 100% |  | 2026-06-23 | 2026-07-02 | 8d |  |  | Onodera Masaki [30%]; Uchida Kohei [80%]; Murakami Jin [20%] | 83.2h | 83.2h | 100.16 | 100.16 | 100.16 | Development |
| 131 | 6.3.2 | Interface Development - Supplier EDI Interface |  | 15d | 2026-10-13 | 2026-11-02 | 130, 35, 91 |  |  | 2026-10-02 | 2026-10-23 | 15d | 10d |  | Uchida Kohei; Okazaki Ren (SI Partner) [20%] | 144h |  | 170.4 | 170.4 |  | Development |
| 132 | 6.3.3 | Interface Connection Test - Supplier EDI Interface |  | 8d | 2026-11-18 | 2026-11-30 | 131, 36, 94 |  |  | 2026-11-10 | 2026-11-19 | 8d | 0d | 5d | Uchida Kohei [60%]; Nomura Akane [50%] | 70.4h |  | 70.72 | 70.72 |  | Testing |
| 133 | 6.4 | **Warehouse Management Interface** |  | 100d | 2026-07-01 A | 2026-11-30 |  | 26% | 74d | 2026-06-23 | 2026-11-19 | 100d | 0d | 5d |  | 297.6h | 83.2h | 339.68 | 339.68 | 100.16 |  |
| 134 | 6.4.1 | Interface Specification - Warehouse Management Interface |  | 8d | 2026-07-01 A | 2026-07-10 A | 124, 61 | 100% |  | 2026-06-23 | 2026-07-02 | 8d |  |  | Onodera Masaki [30%]; Enomoto Mio [80%]; Murakami Jin [20%] | 83.2h | 83.2h | 100.16 | 100.16 | 100.16 | Development |
| 135 | 6.4.2 | Interface Development - Warehouse Management Interface |  | 15d | 2026-10-13 | 2026-11-02 | 134, 35, 91 |  |  | 2026-10-02 | 2026-10-23 | 15d | 10d |  | Enomoto Mio; Okazaki Ren (SI Partner) [20%] | 144h |  | 170.4 | 170.4 |  | Development |
| 136 | 6.4.3 | Interface Connection Test - Warehouse Management Interface |  | 8d | 2026-11-18 | 2026-11-30 | 135, 36, 94 |  |  | 2026-11-10 | 2026-11-19 | 8d | 0d | 5d | Enomoto Mio [60%]; Hirai Tsubasa [50%] | 70.4h |  | 69.12 | 69.12 |  | Testing |
| 137 | 6.5 | **Manufacturing Execution Interface** |  | 97.5d | 2026-07-03 A | 2026-11-30 |  | 26% | 72.15d | 2026-06-23 | 2026-11-19 | 100d | 0d | 5d |  | 297.6h | 83.2h | 341.28 | 341.28 | 100.16 |  |
| 138 | 6.5.1 | Interface Specification - Manufacturing Execution Interface |  | 8d | 2026-07-03 A | 2026-07-15 A | 124, 68 | 100% |  | 2026-06-23 | 2026-07-02 | 8d |  |  | Onodera Masaki [30%]; Kashiwagi Sae [80%]; Kanda Shohei [20%] | 83.2h | 83.2h | 100.16 | 100.16 | 100.16 | Development |
| 139 | 6.5.2 | Interface Development - Manufacturing Execution Interface |  | 15d | 2026-10-13 | 2026-11-02 | 138, 35, 102 |  |  | 2026-10-02 | 2026-10-23 | 15d | 10d |  | Kashiwagi Sae; Okazaki Ren (SI Partner) [20%] | 144h |  | 170.4 | 170.4 |  | Development |
| 140 | 6.5.3 | Interface Connection Test - Manufacturing Execution Interface |  | 8d | 2026-11-18 | 2026-11-30 | 139, 36, 105 |  |  | 2026-11-10 | 2026-11-19 | 8d | 0d | 5d | Kashiwagi Sae [60%]; Terada Yuma [50%] | 70.4h |  | 70.72 | 70.72 |  | Testing |
| 141 | 6.6 | **CRM Interface** |  | 97.5d | 2026-07-03 A | 2026-11-30 |  | 26% | 72.15d | 2026-06-23 | 2026-11-19 | 100d | 0d | 5d |  | 297.6h | 83.2h | 341.28 | 341.28 | 100.16 |  |
| 142 | 6.6.1 | Interface Specification - CRM Interface |  | 8d | 2026-07-03 A | 2026-07-15 A | 124, 75 | 100% |  | 2026-06-23 | 2026-07-02 | 8d |  |  | Onodera Masaki [30%]; Kuroda Yamato [80%]; Yamashita Aki [20%] | 83.2h | 83.2h | 100.16 | 100.16 | 100.16 | Development |
| 143 | 6.6.2 | Interface Development - CRM Interface |  | 15d | 2026-10-13 | 2026-11-02 | 142, 35, 113 |  |  | 2026-10-02 | 2026-10-23 | 15d | 10d |  | Kuroda Yamato; Okazaki Ren (SI Partner) [20%] | 144h |  | 170.4 | 170.4 |  | Development |
| 144 | 6.6.3 | Interface Connection Test - CRM Interface |  | 8d | 2026-11-18 | 2026-11-30 | 143, 36, 116 |  |  | 2026-11-10 | 2026-11-19 | 8d | 0d | 5d | Kuroda Yamato [60%]; Nomura Akane [50%] | 70.4h |  | 70.72 | 70.72 |  | Testing |
| 145 | 6.7 | **BI and Consolidation Interface** |  | 105d | 2026-07-01 A | 2026-12-07 |  | 26% | 77.7d | 2026-06-23 | 2026-11-19 | 100d | -5d | 0d |  | 297.6h | 83.2h | 339.68 | 339.68 | 100.16 |  |
| 146 | 6.7.1 | Interface Specification - BI and Consolidation Interface |  | 8d | 2026-07-01 A | 2026-07-10 A | 124, 54 | 100% |  | 2026-06-23 | 2026-07-02 | 8d |  |  | Onodera Masaki [30%]; Ikeda Nanami [80%]; Ito Naoko [20%] | 83.2h | 83.2h | 100.16 | 100.16 | 100.16 | Development |
| 147 | 6.7.2 | Interface Development - BI and Consolidation Interface |  | 15d | 2026-10-13 | 2026-11-02 | 146, 35, 80 |  |  | 2026-10-02 | 2026-10-23 | 15d | 10d | 15d | Ikeda Nanami; Okazaki Ren (SI Partner) [20%] | 144h |  | 170.4 | 170.4 |  | Development |
| 148 | 6.7.3 | Interface Connection Test - BI and Consolidation Interface |  | 8d | 2026-11-26 | 2026-12-07 | 147, 36, 83 |  |  | 2026-11-10 | 2026-11-19 | 8d | -5d | 0d | Ikeda Nanami [60%]; Hirai Tsubasa [50%] | 70.4h |  | 69.12 | 69.12 |  | Testing |
| 149 | 6.8 | Interfaces Ready | milestone | 0d | 2026-12-07 | 2026-12-07 | 128, 132, 136, 140, 144, 148 |  |  | 2026-11-19 | 2026-11-19 | 0d | -5d | 11d |  |  |  |  |  |  | Development |

| ID | WBS | Task | Type | Duration | Start | Finish | Predecessors | Complete | Remaining | Baseline start | Baseline finish | Baseline duration | Total slack | Free slack | Resources | Work | Actual work | Cost | Baseline cost | Actual cost | Team |
| --- | --- | --- | --- | --- | --- | --- | --- | --- | --- | --- | --- | --- | --- | --- | --- | --- | --- | --- | --- | --- | --- |
| 150 | 7 | **Data Migration** |  | 324d | 2026-03-25 A | 2027-07-27 |  | 66% | 110.16d | 2026-03-16 | 2027-07-02 | 314d | -14d | 0d |  | 4251.2h | 2686.4h | 4,162.08 | 3,881.28 | 2,508.48 |  |
| 151 | 7.1 | Data Migration Strategy |  | 12d | 2026-03-25 A | 2026-04-09 A | 27 | 100% |  | 2026-03-16 | 2026-04-01 | 12d |  |  | Hoshino Kaori; Onodera Masaki [30%]; Sugiyama Toru [20%] | 144h | 144h | 197.28 | 197.28 | 197.28 | Data Migration |
| 152 | 7.2 | Migration Tool and Framework Build |  | 20d | 2026-07-02 A | 2026-07-30 A | 151, 35 | 100% |  | 2026-06-24 | 2026-07-22 | 20d |  |  | Manabe Toru; Wakabayashi Sho [80%] | 288h | 288h | 296 | 296 | 296 | Data Migration |
| 153 | 7.3 | **Migration Object - Customer Master** |  | 83d | 2026-04-10 A | 2026-08-12 A |  | 100% |  | 2026-04-02 | 2026-08-03 | 83d |  |  |  | 160h | 160h | 163.2 | 163.2 | 163.2 |  |
| 154 | 7.3.1 | Mapping and Extraction - Customer Master |  | 10d | 2026-04-10 A | 2026-04-23 A | 151, 47 | 100% |  | 2026-04-02 | 2026-04-15 | 10d |  |  | Manabe Toru [80%]; Sales Key Users [40%] | 96h | 96h | 92.8 | 92.8 | 92.8 | Data Migration |
| 155 | 7.3.2 | Load and Verification - Customer Master |  | 8d | 2026-07-31 A | 2026-08-12 A | 154, 152 | 100% |  | 2026-07-23 | 2026-08-03 | 8d |  |  | Manabe Toru [80%]; Hoshino Kaori [20%] | 64h | 64h | 70.4 | 70.4 | 70.4 | Data Migration |
| 156 | 7.4 | **Migration Object - Vendor Master** |  | 83d | 2026-04-10 A | 2026-08-12 A |  | 100% |  | 2026-04-02 | 2026-08-03 | 83d |  |  |  | 160h | 160h | 163.2 | 163.2 | 163.2 |  |
| 157 | 7.4.1 | Mapping and Extraction - Vendor Master |  | 10d | 2026-04-10 A | 2026-04-23 A | 151, 47 | 100% |  | 2026-04-02 | 2026-04-15 | 10d |  |  | Yagi Nozomi [80%]; Procurement Key Users [40%] | 96h | 96h | 92.8 | 92.8 | 92.8 | Data Migration |
| 158 | 7.4.2 | Load and Verification - Vendor Master |  | 8d | 2026-07-31 A | 2026-08-12 A | 157, 152 | 100% |  | 2026-07-23 | 2026-08-03 | 8d |  |  | Yagi Nozomi [80%]; Hoshino Kaori [20%] | 64h | 64h | 70.4 | 70.4 | 70.4 | Data Migration |
| 159 | 7.5 | **Migration Object - Material Master** |  | 83d | 2026-04-10 A | 2026-08-12 A |  | 100% |  | 2026-04-02 | 2026-08-03 | 83d |  |  |  | 160h | 160h | 157.44 | 157.44 | 157.44 |  |
| 160 | 7.5.1 | Mapping and Extraction - Material Master |  | 10d | 2026-04-10 A | 2026-04-23 A | 151, 47 | 100% |  | 2026-04-02 | 2026-04-15 | 10d |  |  | Wakabayashi Sho [80%]; Production Key Users [40%] | 96h | 96h | 89.6 | 89.6 | 89.6 | Data Migration |
| 161 | 7.5.2 | Load and Verification - Material Master |  | 8d | 2026-07-31 A | 2026-08-12 A | 160, 152 | 100% |  | 2026-07-23 | 2026-08-03 | 8d |  |  | Wakabayashi Sho [80%]; Hoshino Kaori [20%] | 64h | 64h | 67.84 | 67.84 | 67.84 | Data Migration |
| 162 | 7.6 | **Migration Object - BOM and Routing** |  | 18d | 2026-08-17 A | 2026-09-09 |  | 44% | 10.08d | 2026-08-04 | 2026-09-01 | 18d | 13d | 0d |  | 160h | 76.8h | 163.2 | 163.2 | 74.24 |  |
| 163 | 7.6.1 | Mapping and Extraction - BOM and Routing |  | 10d | 2026-08-17 A | 2026-08-28 | 151, 47, 155 | 80% | 2d | 2026-08-04 | 2026-08-20 | 10d | 13d | 0d | Manabe Toru [80%]; Production Key Users [40%] | 96h | 76.8h | 92.8 | 92.8 | 74.24 | Data Migration |
| 164 | 7.6.2 | Load and Verification - BOM and Routing |  | 8d | 2026-08-31 | 2026-09-09 | 163, 152 |  |  | 2026-08-21 | 2026-09-01 | 8d | 13d | 0d | Manabe Toru [80%]; Hoshino Kaori [20%] | 64h |  | 70.4 | 70.4 |  | Data Migration |
| 165 | 7.7 | **Migration Object - Open Purchase and Sales Orders** |  | 18d | 2026-08-17 A | 2026-09-09 |  | 44% | 10.08d | 2026-08-04 | 2026-09-01 | 18d | 31d | 0d |  | 160h | 76.8h | 163.2 | 163.2 | 74.24 |  |
| 166 | 7.7.1 | Mapping and Extraction - Open Purchase and Sales Orders |  | 10d | 2026-08-17 A | 2026-08-28 | 151, 47, 158 | 80% | 2d | 2026-08-04 | 2026-08-20 | 10d | 31d | 0d | Yagi Nozomi [80%]; Sales Key Users [40%] | 96h | 76.8h | 92.8 | 92.8 | 74.24 | Data Migration |
| 167 | 7.7.2 | Load and Verification - Open Purchase and Sales Orders |  | 8d | 2026-08-31 | 2026-09-09 | 166, 152 |  |  | 2026-08-21 | 2026-09-01 | 8d | 31d | 18d | Yagi Nozomi [80%]; Hoshino Kaori [20%] | 64h |  | 70.4 | 70.4 |  | Data Migration |
| 168 | 7.8 | **Migration Object - General Ledger Balances** |  | 18d | 2026-08-17 A | 2026-09-09 |  | 44% | 10.08d | 2026-08-04 | 2026-09-01 | 18d | 31d | 0d |  | 160h | 76.8h | 157.44 | 157.44 | 71.68 |  |
| 169 | 7.8.1 | Mapping and Extraction - General Ledger Balances |  | 10d | 2026-08-17 A | 2026-08-28 | 151, 47, 161 | 80% | 2d | 2026-08-04 | 2026-08-20 | 10d | 31d | 0d | Wakabayashi Sho [80%]; Finance Key Users [40%] | 96h | 76.8h | 89.6 | 89.6 | 71.68 | Data Migration |
| 170 | 7.8.2 | Load and Verification - General Ledger Balances |  | 8d | 2026-08-31 | 2026-09-09 | 169, 152 |  |  | 2026-08-21 | 2026-09-01 | 8d | 31d | 18d | Wakabayashi Sho [80%]; Hoshino Kaori [20%] | 64h |  | 67.84 | 67.84 |  | Data Migration |
| 171 | 7.9 | **Migration Object - Fixed Assets** |  | 18d | 2026-09-10 | 2026-10-07 |  |  |  | 2026-09-02 | 2026-09-29 | 18d | 13d | 0d |  | 160h |  | 163.2 | 163.2 |  |  |
| 172 | 7.9.1 | Mapping and Extraction - Fixed Assets |  | 10d | 2026-09-10 | 2026-09-25 | 151, 47, 164 |  |  | 2026-09-02 | 2026-09-15 | 10d | 13d | 0d | Manabe Toru [80%]; Finance Key Users [40%] | 96h |  | 92.8 | 92.8 |  | Data Migration |
| 173 | 7.9.2 | Load and Verification - Fixed Assets |  | 8d | 2026-09-28 | 2026-10-07 | 172, 152 |  |  | 2026-09-16 | 2026-09-29 | 8d | 13d | 0d | Manabe Toru [80%]; Hoshino Kaori [20%] | 64h |  | 70.4 | 70.4 |  | Data Migration |
| 174 | 7.10 | Master Data Cleansing |  | 52d | 2026-04-24 A | 2026-07-10 A | 154, 157, 160 | 100% |  | 2026-04-16 | 2026-06-16 | 40d |  |  | Yagi Nozomi [50%]; Sales Key Users; Procurement Key Users; Production Key Users | 1456h | 1456h | 1,216.8 | 936 | 1,216.8 | Data Migration |
| 175 | 7.11 | Reconciliation Rules Design |  | 10d | 2026-04-10 A | 2026-04-23 A | 151 | 100% |  | 2026-04-02 | 2026-04-15 | 10d |  |  | Hoshino Kaori [60%]; Finance Key Users [50%] | 88h | 88h | 94.4 | 94.4 | 94.4 | Data Migration |
| 176 | 7.12 | Mock Migration Run 1 |  | 12d | 2026-10-08 | 2026-10-26 | 174, 170, 173, 167, 164 |  |  | 2026-09-30 | 2026-10-16 | 12d | 13d | 0d | Hoshino Kaori [80%]; Manabe Toru; Yagi Nozomi; Wakabayashi Sho | 364.8h |  | 397.44 | 397.44 |  | Data Migration |
| 177 | 7.13 | Mock Migration Run 2 |  | 10d | 2027-01-27 | 2027-02-09 | 176FS+10d, 186 |  |  | 2027-01-12 | 2027-01-25 | 10d | 34d | 35d | Hoshino Kaori [80%]; Manabe Toru; Yagi Nozomi [80%]; Wakabayashi Sho [80%] | 272h |  | 298.4 | 298.4 |  | Data Migration |
| 178 | 7.14 | Mock Migration Run 3 (Production Dry Run) |  | 8d | 2027-06-29 | 2027-07-08 | 177FS+10d, 37, 204 |  |  | 2027-06-07 | 2027-06-16 | 8d | -14d | 0d | Hoshino Kaori; Manabe Toru; Yagi Nozomi [80%]; Wakabayashi Sho [80%]; Tanigawa Osamu [30%] | 249.6h |  | 281.28 | 281.28 |  | Data Migration |
| 179 | 7.15 | Migration Data Quality Verification |  | 12d | 2027-07-09 | 2027-07-27 | 178, 175 |  |  | 2027-06-17 | 2027-07-02 | 12d | -11d | 0d | Hoshino Kaori [60%]; Finance Key Users; Sales Key Users [80%]; Nomura Akane [40%] | 268.8h |  | 249.6 | 249.6 |  | Data Migration |
| 180 | 7.16 | Data Migration Ready | milestone | 0d | 2027-07-27 | 2027-07-27 | 179 |  |  | 2027-07-02 | 2027-07-02 | 0d | -11d | 4d |  |  |  |  |  |  | Data Migration |

Notes:
- 174: Cleansing of the material master required an additional wave after the first quality check.

| ID | WBS | Task | Type | Duration | Start | Finish | Predecessors | Complete | Remaining | Baseline start | Baseline finish | Baseline duration | Total slack | Free slack | Deadline | Resources | Work | Actual work | Cost | Baseline cost | Actual cost | Team |
| --- | --- | --- | --- | --- | --- | --- | --- | --- | --- | --- | --- | --- | --- | --- | --- | --- | --- | --- | --- | --- | --- | --- |
| 181 | 8 | **Integrated Testing** |  | 253.5d | 2026-07-10 A | 2027-07-30 |  | 12% | 223.08d | 2026-06-30 | 2027-07-07 | 246d | -16d | 0d |  |  | 7972.8h | 672.17h | 8,422.32 | 8,245.92 | 708.58 |  |
| 182 | 8.1 | **System Integration Test** |  | 173.5d | 2026-07-10 A | 2027-04-02 |  | 20% | 138.8d | 2026-06-30 | 2027-03-10 | 166d | -16d | 0d |  |  | 4200h | 584.17h | 4,272.08 | 4,095.68 | 603.38 |  |
| 183 | 8.1.1 | SIT Planning |  | 12d | 2026-07-10 A | 2026-07-29 A | 77 | 100% |  | 2026-06-30 | 2026-07-15 | 12d |  |  |  | Nagai Chiaki; Kikuchi Rie [30%] | 124.8h | 124.8h | 151.68 | 151.68 | 151.68 | Testing |
| 184 | 8.1.2 | SIT Scenario and Case Creation |  | 30d | 2026-07-29 A | 2026-09-14 | 183 | 58% | 12.6d | 2026-07-16 | 2026-09-01 | 30d | 50.5d | 66.5d |  | Nagai Chiaki [50%]; Terada Yuma; Nomura Akane; Hirai Tsubasa [80%] | 792h | 459.37h | 778.8 | 778.8 | 451.7 | Testing |
| 185 | 8.1.3 | SIT Environment and Data Preparation |  | 10d | 2026-10-27 | 2026-11-10 | 176, 36 |  |  | 2026-10-19 | 2026-10-30 | 10d | 13d | 29d |  | Fukui Kanade [50%]; Wakabayashi Sho [50%] | 80h |  | 88 | 88 |  | Testing |
| 186 | 8.1.4 | SIT Cycle 1 |  | 20d | 2026-12-23 | 2027-01-26 | 184, 185, 149, 89, 100, 111, 122 |  |  | 2026-12-08 | 2027-01-08 | 20d | -16d | 0d |  | Nagai Chiaki [80%]; Terada Yuma; Nomura Akane; Hirai Tsubasa; Finance Key Users [50%]; Procurement Key Users [50%] | 768h |  | 736 | 736 |  | Testing |
| 187 | 8.1.5 | Defect Resolution - Cycle 1 |  | 25d | 2027-01-05 | 2027-02-09 | 186SS+5d |  |  | 2026-12-15 | 2027-01-18 | 20d | -16d | 0d |  | Aoki Sota [80%]; Uchida Kohei [80%]; Okamoto Riku [80%]; Kuroda Yamato [80%]; Baba Toshio (SI Partner) [30%]; Handa Yuri (SI Partner) [30%] | 760h |  | 882 | 705.6 |  | Development |
| 188 | 8.1.6 | SIT Cycle 2 |  | 18d | 2027-02-10 | 2027-03-09 | 186, 187 |  |  | 2027-01-19 | 2027-02-12 | 18d | -16d | 0d |  | Nagai Chiaki [80%]; Terada Yuma; Nomura Akane; Hirai Tsubasa; Production Key Users [50%]; Sales Key Users [50%] | 691.2h |  | 662.4 | 662.4 |  | Testing |
| 189 | 8.1.7 | Defect Resolution - Cycle 2 |  | 15d | 2027-02-18 | 2027-03-11 | 188SS+5d |  |  | 2027-01-26 | 2027-02-16 | 15d | -16d | 0d |  | Ikeda Nanami [80%]; Enomoto Mio [80%]; Kashiwagi Sae [80%]; Sasaki Hinata [80%] | 384h |  | 403.2 | 403.2 |  | Development |
| 190 | 8.1.8 | SIT Cycle 3 (End-to-End) |  | 15d | 2027-03-12 | 2027-04-02 | 188, 189 |  |  | 2027-02-17 | 2027-03-10 | 15d | -16d | 0d |  | Nagai Chiaki; Terada Yuma; Nomura Akane; Finance Key Users [50%]; Procurement Key Users [50%]; Production Key Users [50%]; Sales Key Users [50%] | 600h |  | 570 | 570 |  | Testing |
| 191 | 8.1.9 | SIT Complete | milestone | 0d | 2027-04-02 | 2027-04-02 | 190 |  |  | 2027-03-10 | 2027-03-10 | 0d | -16d | 0d |  |  |  |  |  |  |  | Testing |
| 192 | 8.2 | **Performance and Security Test** |  | 82d | 2027-01-27 | 2027-05-31 |  |  |  | 2027-01-12 | 2027-05-07 | 77d | -16d | 0d |  |  | 1052.8h |  | 1,506.8 | 1,506.8 |  |  |
| 193 | 8.2.1 | Performance Test Scenario Design |  | 12d | 2027-01-27 | 2027-02-12 | 186 |  |  | 2027-01-12 | 2027-01-27 | 12d | 29d | 33d |  | Onodera Masaki [50%]; Okazaki Ren (SI Partner) [50%]; Hirai Tsubasa [50%] | 144h |  | 206.4 | 206.4 |  | Testing |
| 194 | 8.2.2 | Performance and Volume Test |  | 15d | 2027-04-05 | 2027-04-23 | 193, 191 |  |  | 2027-03-11 | 2027-04-01 | 15d | -4d | 0d |  | Okazaki Ren (SI Partner) [80%]; Tanigawa Osamu [50%]; Hirai Tsubasa [80%] | 252h |  | 345 | 345 |  | Testing |
| 195 | 8.2.3 | Performance Tuning |  | 20d | 2027-04-12 | 2027-05-13 | 194SS+5d |  |  | 2027-03-18 | 2027-04-15 | 20d | -4d | 12d |  | Onodera Masaki [50%]; Tanigawa Osamu [50%]; Okazaki Ren (SI Partner) [80%] | 288h |  | 468.8 | 468.8 |  | Testing |
| 196 | 8.2.4 | Vulnerability Assessment |  | 12d | 2027-04-05 | 2027-04-20 | 191 |  |  | 2027-03-11 | 2027-03-29 | 12d | -16d | 0d |  | Tomita Rui [80%]; Kaneko Hina [50%] | 124.8h |  | 177.6 | 177.6 |  | Security |
| 197 | 8.2.5 | Penetration Test |  | 10d | 2027-04-21 | 2027-05-10 | 196 |  |  | 2027-03-30 | 2027-04-12 | 10d | -16d | 0d |  | Tomita Rui [80%] | 64h |  | 96 | 96 |  | Security |
| 198 | 8.2.6 | Security Remediation |  | 15d | 2027-05-11 | 2027-05-31 | 197 |  |  | 2027-04-13 | 2027-05-07 | 15d | -16d | 0d |  | Kaneko Hina [50%]; Fukui Kanade [50%]; Ikeda Nanami [50%] | 180h |  | 213 | 213 |  | Security |
| 199 | 8.2.7 | Non-functional Test Complete | milestone | 0d | 2027-05-31 | 2027-05-31 | 195, 198 |  |  | 2027-05-07 | 2027-05-07 | 0d | -16d | 0d |  |  |  |  |  |  |  | Testing |
| 200 | 8.3 | **User Acceptance Test** |  | 241.5d | 2026-07-29 A | 2027-07-30 |  | 11% | 214.94d | 2026-07-16 | 2027-07-07 | 234d | -16d | 0d |  |  | 2720h | 88h | 2,643.44 | 2,643.44 | 105.2 |  |
| 201 | 8.3.1 | UAT Planning |  | 10d | 2026-07-29 A | 2026-08-17 A | 183 | 100% |  | 2026-07-16 | 2026-07-30 | 10d |  |  |  | Nagai Chiaki [50%]; Matsuda Kanako [30%]; Kikuchi Rie [30%] | 88h | 88h | 105.2 | 105.2 | 105.2 | Testing |
| 202 | 8.3.2 | UAT Data and Environment Preparation |  | 12d | 2027-04-05 | 2027-04-20 | 191, 177 |  |  | 2027-03-11 | 2027-03-29 | 12d | -1d | 0d |  | Fukui Kanade [50%]; Wakabayashi Sho [50%]; Nomura Akane [50%] | 144h |  | 151.2 | 151.2 |  | Testing |
| 203 | 8.3.3 | Key User Training for UAT |  | 10d | 2027-04-21 | 2027-05-10 | 202 |  |  | 2027-03-30 | 2027-04-12 | 10d | -1d | 15d |  | Sakamoto Yuzu; Nakai Gaku [50%]; Finance Key Users; Procurement Key Users; Production Key Users; Sales Key Users | 440h |  | 364 | 364 |  | Change Management |
| 204 | 8.3.4 | UAT Wave 1 (Finance and Procurement) |  | 20d | 2027-06-01 | 2027-06-28 | 203, 199 |  |  | 2027-05-10 | 2027-06-04 | 20d | -16d | 0d |  | Finance Key Users [200%]; Procurement Key Users [200%]; Nagai Chiaki [50%]; Ito Naoko [50%]; Murakami Jin [50%] | 880h |  | 820 | 820 |  | Testing |
| 205 | 8.3.5 | UAT Defect Resolution |  | 18d | 2027-06-08 | 2027-07-01 | 204SS+5d |  |  | 2027-05-17 | 2027-06-09 | 18d | -16d | 0d |  | Aoki Sota [60%]; Uchida Kohei [60%]; Baba Toshio (SI Partner) [40%]; Kurihara Mei (SI Partner) [40%] | 288h |  | 383.04 | 383.04 |  | Development |
| 206 | 8.3.6 | UAT Wave 2 (Production and Sales) |  | 20d | 2027-07-02 | 2027-07-30 | 204, 205 |  |  | 2027-06-10 | 2027-07-07 | 20d | -16d | 0d |  | Production Key Users [200%]; Sales Key Users [200%]; Nagai Chiaki [50%]; Kanda Shohei [50%]; Yamashita Aki [50%] | 880h |  | 820 | 820 |  | Testing |
| 207 | 8.3.7 | UAT Sign-off | milestone | 0d | 2027-07-30 | 2027-07-30 | 206 |  |  | 2027-07-07 | 2027-07-07 | 0d | -16d | 0d | 2027-07-07 |  |  |  |  |  |  | Testing |

| ID | WBS | Task | Type | Duration | Start | Finish | Predecessors | Complete | Remaining | Baseline start | Baseline finish | Baseline duration | Total slack | Free slack | Deadline | Calendar | Resources | Work | Actual work | Cost | Baseline cost | Actual cost | Team |
| --- | --- | --- | --- | --- | --- | --- | --- | --- | --- | --- | --- | --- | --- | --- | --- | --- | --- | --- | --- | --- | --- | --- | --- |
| 208 | 9 | **Organizational Change and Training** |  | 232d | 2026-03-25 A | 2027-03-11 |  | 38% | 143.84d | 2026-03-16 | 2027-02-24 | 227d | 81d | 0d |  |  |  | 2350.4h | 731.2h | 3,455.04 | 3,455.04 | 794.4 |  |
| 209 | 9.1 | Change Impact Assessment |  | 20d | 2026-06-09 A | 2026-07-06 A | 51, 72 | 100% |  | 2026-06-01 | 2026-06-26 | 20d |  |  |  |  | Matsuda Kanako; Yokota Kei [50%] | 240h | 240h | 264 | 264 | 264 | Change Management |
| 210 | 9.2 | Stakeholder Analysis |  | 10d | 2026-03-25 A | 2026-04-07 A | 27 | 100% |  | 2026-03-16 | 2026-03-30 | 10d |  |  |  |  | Matsuda Kanako [80%] | 64h | 64h | 76.8 | 76.8 | 76.8 | Change Management |
| 211 | 9.3 | Communication Plan |  | 10d | 2026-04-08 A | 2026-04-21 A | 210 | 100% |  | 2026-03-31 | 2026-04-13 | 10d |  |  |  |  | Matsuda Kanako [80%]; Yokota Kei [30%] | 88h | 88h | 98.4 | 98.4 | 98.4 | Change Management |
| 212 | 9.4 | Change Communication - FY2026 H1 |  | 20d | 2026-04-22 A | 2026-05-25 A | 211 | 100% |  | 2026-04-14 | 2026-05-15 | 20d |  |  |  |  | Matsuda Kanako [40%]; Yokota Kei [30%] | 112h | 112h | 120 | 120 | 120 | Change Management |
| 213 | 9.5 | Change Communication - FY2026 H2 |  | 20d | 2026-07-22 A | 2026-08-21 A | 212FS+40d | 100% |  | 2026-07-13 | 2026-08-10 | 20d |  |  |  |  | Matsuda Kanako [40%]; Yokota Kei [30%] | 112h | 112h | 120 | 120 | 120 | Change Management |
| 214 | 9.6 | Change Communication - FY2027 H1 |  | 20d | 2026-10-22 | 2026-11-19 | 213FS+40d |  |  | 2026-10-14 | 2026-11-11 | 20d | 228d | 0d |  |  | Matsuda Kanako [40%]; Yokota Kei [30%] | 112h |  | 120 | 120 |  | Change Management |
| 215 | 9.7 | Change Communication - FY2027 H2 |  | 20d | 2027-01-25 | 2027-02-22 | 214FS+40d |  |  | 2027-01-15 | 2027-02-12 | 20d | 228d |  |  |  | Matsuda Kanako [40%]; Yokota Kei [30%] | 112h |  | 120 | 120 |  | Change Management |
| 216 | 9.8 | Training Strategy and Curriculum |  | 12d | 2026-07-07 A | 2026-07-23 A | 209 | 100% |  | 2026-06-29 | 2026-07-14 | 12d |  |  |  |  | Sakamoto Yuzu [80%]; Matsuda Kanako [40%] | 115.2h | 115.2h | 115.2 | 115.2 | 115.2 | Change Management |
| 217 | 9.9 | Training Material - Finance and Controlling |  | 15d | 2026-12-02 | 2026-12-22 | 216, 87 |  |  | 2026-11-16 | 2026-12-07 | 15d | 81d | 0d |  |  | Sakamoto Yuzu [80%]; Ito Naoko [20%] | 120h |  | 117.6 | 117.6 |  | Change Management |
| 218 | 9.10 | Training Material - Procurement and Inventory |  | 15d | 2026-11-25 | 2026-12-15 | 216, 98 |  |  | 2026-11-16 | 2026-12-07 | 15d | 86d | 5d |  |  | Sakamoto Yuzu [80%]; Murakami Jin [20%] | 120h |  | 117.6 | 117.6 |  | Change Management |
| 219 | 9.11 | Training Material - Production Planning |  | 15d | 2026-11-25 | 2026-12-15 | 216, 109 |  |  | 2026-11-16 | 2026-12-07 | 15d | 86d | 5d |  |  | Nakai Gaku [80%]; Kanda Shohei [20%] | 120h |  | 117.6 | 117.6 |  | Change Management |
| 220 | 9.12 | Training Material - Sales and Distribution |  | 15d | 2026-11-25 | 2026-12-15 | 216, 120 |  |  | 2026-11-16 | 2026-12-07 | 15d | 86d | 5d |  |  | Nakai Gaku [80%]; Yamashita Aki [20%] | 120h |  | 117.6 | 117.6 |  | Change Management |
| 221 | 9.13 | Train the Trainer |  | 12d | 2026-12-23 | 2027-01-14 | 217, 218, 219, 220 |  |  | 2026-12-08 | 2026-12-23 | 12d | 81d | 0d |  |  | Sakamoto Yuzu; Nakai Gaku; Finance Key Users [50%]; Procurement Key Users [50%]; Production Key Users [50%]; Sales Key Users [50%] | 384h |  | 326.4 | 326.4 |  | Change Management |
| 222 | 9.14 | End User Training - Head Office |  | 10d | 2027-01-15 | 2027-01-28 | 221 |  |  | 2026-12-24 | 2027-01-13 | 10d | 81d | 0d |  |  | Sakamoto Yuzu; Nakai Gaku; Training Venue and Materials; Travel and Expenses | 160h |  | 524 | 524 |  | Change Management |
| 223 | 9.15 | End User Training - Kanto Plant |  | 10d | 2027-01-29 | 2027-02-12 | 222 |  |  | 2027-01-14 | 2027-01-27 | 10d | 81d | 0d |  |  | Sakamoto Yuzu; Nakai Gaku; Training Venue and Materials; Travel and Expenses | 160h |  | 524 | 524 |  | Change Management |
| 224 | 9.16 | End User Training - Kansai Plant |  | 10d | 2027-02-15 | 2027-03-01 | 223 |  |  | 2027-01-28 | 2027-02-10 | 10d | 81d | 0d |  |  | Sakamoto Yuzu; Nakai Gaku; Training Venue and Materials; Travel and Expenses | 160h |  | 524 | 524 |  | Change Management |
| 225 | 9.17 | Training Effectiveness Review |  | 8d | 2027-03-02 | 2027-03-11 | 224 |  |  | 2027-02-12 | 2027-02-24 | 8d | 81d | 0d |  |  | Sakamoto Yuzu [50%]; Matsuda Kanako [30%] | 51.2h |  | 51.84 | 51.84 |  | Change Management |
| 226 | 9.18 | Organization Ready | milestone | 0d | 2027-03-11 | 2027-03-11 | 225 |  |  | 2027-02-24 | 2027-02-24 | 0d | 81d | 96d |  |  |  |  |  |  |  |  | Change Management |
| 227 | 10 | **Cutover Wave 1 (Finance and Procurement)** |  | 119d | 2027-04-05 | 2027-09-29 |  |  |  | 2027-03-11 | 2027-09-06 | 120d | -70.12d | 0d |  |  |  | 2060h |  | 2,554.48 | 2,554.48 |  |  |
| 228 | 10.1 | Cutover Plan - Wave 1 |  | 20d | 2027-04-05 | 2027-05-06 | 191 |  |  | 2027-03-11 | 2027-04-08 | 20d | 31d | 45d |  |  | Amano Shigeru [50%]; Kikuchi Rie [80%]; Hoshino Kaori [50%]; Tanigawa Osamu [30%] | 336h |  | 437.6 | 437.6 |  | Cutover |
| 229 | 10.2 | Cutover Dress Rehearsal 1 - Wave 1 |  | 12d | 2027-07-08 | 2027-07-12 | 228, 178 |  |  | 2027-06-16 | 2027-06-20 | 12d | -55.12d | 9d |  | 24x7 Cutover | Hoshino Kaori; Manabe Toru; Tanigawa Osamu; Ito Naoko [50%] | 336h |  | 417.6 | 417.6 |  | Cutover |
| 230 | 10.3 | Cutover Dress Rehearsal 2 - Wave 1 |  | 9d | 2027-07-30 | 2027-08-02 | 229FS+45d, 207 |  |  | 2027-07-07 | 2027-07-10 | 9d | -64.12d | 1.88d |  | 24x7 Cutover | Hoshino Kaori; Manabe Toru; Tanigawa Osamu; Murakami Jin [50%] | 252h |  | 313.2 | 313.2 |  | Cutover |
| 231 | 10.4 | Cutover Readiness Review - Wave 1 |  | 3d | 2027-08-03 | 2027-08-05 | 230, 226, 180 |  |  | 2027-07-12 | 2027-07-14 | 3d | -15d | 0d |  |  | Hasegawa Kunio [30%]; Amano Shigeru; Sugiyama Toru [80%]; Kikuchi Rie [50%] | 62.4h |  | 93.12 | 93.12 |  | Cutover |
| 232 | 10.5 | Business Data Freeze - Wave 1 |  | 2d | 2027-08-06 | 2027-08-09 | 231 |  |  | 2027-07-15 | 2027-07-16 | 2d | -15d | 0d |  |  | Finance Key Users [150%]; Procurement Key Users [150%]; Ito Naoko [50%] | 56h |  | 48.8 | 48.8 |  | Cutover |
| 233 | 10.6 | Production Data Migration - Wave 1 |  | 9d | 2027-08-09 | 2027-08-12 | 232 |  |  | 2027-07-16 | 2027-07-19 | 9d | -70.12d | 0d |  | 24x7 Cutover | Hoshino Kaori; Manabe Toru; Yagi Nozomi; Tanigawa Osamu [80%] | 273.6h |  | 322.56 | 322.56 |  | Cutover |
| 234 | 10.7 | Post-migration Validation - Wave 1 |  | 6d | 2027-08-12 | 2027-08-14 | 233 |  |  | 2027-07-19 | 2027-07-21 | 6d | -70.12d | 4.88d |  | 24x7 Cutover | Finance Key Users [200%]; Ito Naoko; Nagai Chiaki [50%] | 168h |  | 169.2 | 169.2 |  | Cutover |
| 235 | 10.8 | Go / No-Go Decision - Wave 1 |  | 1d | 2027-08-16 | 2027-08-16 | 234 |  |  | 2027-07-22 | 2027-07-22 | 1d | -15d | 0d |  |  | Hasegawa Kunio; Amano Shigeru; Sugiyama Toru | 24h |  | 39.6 | 39.6 |  | Cutover |
| 236 | 10.9 | Go-Live Wave 1 | milestone | 0d | 2027-08-16 | 2027-08-16 | 235 |  |  | 2027-07-22 | 2027-07-22 | 0d | -15d | 0d | 2027-07-22 |  |  |  |  |  |  |  | Cutover |
| 237 | 10.10 | Hypercare - Wave 1 |  | 30d | 2027-08-17 | 2027-09-29 | 236 |  |  | 2027-07-23 | 2027-09-06 | 30d | -13d | 0d |  |  | Ito Naoko [50%]; Murakami Jin [50%]; Baba Toshio (SI Partner) [50%]; Aoki Sota [50%]; Yokota Kei [30%] | 552h |  | 712.8 | 712.8 |  | Cutover |

| ID | WBS | Task | Type | Duration | Start | Finish | Predecessors | Baseline start | Baseline finish | Baseline duration | Total slack | Free slack | Deadline | Calendar | Resources | Work | Cost | Baseline cost | Team |
| --- | --- | --- | --- | --- | --- | --- | --- | --- | --- | --- | --- | --- | --- | --- | --- | --- | --- | --- | --- |
| 238 | 11 | **Cutover Wave 2 (Production and Sales)** |  | 71d | 2027-08-17 | 2027-11-30 |  | 2027-07-23 | 2027-11-09 | 72d | -61.12d | 0d |  |  |  | 1815.2h | 2,140.88 | 2,140.88 |  |
| 239 | 11.1 | Cutover Plan - Wave 2 |  | 15d | 2027-08-17 | 2027-09-06 | 236 | 2027-07-23 | 2027-08-16 | 15d | 2d | 15d |  |  | Kikuchi Rie [80%]; Hoshino Kaori [50%]; Fukui Kanade [30%] | 192h | 226.8 | 226.8 | Cutover |
| 240 | 11.2 | Cutover Dress Rehearsal - Wave 2 |  | 12d | 2027-09-29 | 2027-10-03 | 239, 237 | 2027-09-06 | 2027-09-10 | 12d | -61.12d | 1.88d |  | 24x7 Cutover | Hoshino Kaori; Yagi Nozomi; Fukui Kanade; Kanda Shohei [50%] | 336h | 403.2 | 403.2 | Cutover |
| 241 | 11.3 | Cutover Readiness Review - Wave 2 |  | 3d | 2027-10-04 | 2027-10-06 | 240 | 2027-09-13 | 2027-09-15 | 3d | -13d | 0d |  |  | Hasegawa Kunio [30%]; Amano Shigeru; Sugiyama Toru [80%] | 50.4h | 79.92 | 79.92 | Cutover |
| 242 | 11.4 | Business Data Freeze - Wave 2 |  | 2d | 2027-10-07 | 2027-10-08 | 241 | 2027-09-16 | 2027-09-17 | 2d | -13d | 0d |  |  | Production Key Users [150%]; Sales Key Users [150%]; Yamashita Aki [50%] | 56h | 48.8 | 48.8 | Cutover |
| 243 | 11.5 | Production Data Migration - Wave 2 |  | 12d | 2027-10-08 | 2027-10-12 | 242 | 2027-09-17 | 2027-09-21 | 12d | -61.12d | 0d |  | 24x7 Cutover | Hoshino Kaori; Yagi Nozomi; Wakabayashi Sho; Fukui Kanade [80%] | 364.8h | 413.76 | 413.76 | Cutover |
| 244 | 11.6 | Post-migration Validation - Wave 2 |  | 6d | 2027-10-12 | 2027-10-14 | 243 | 2027-09-21 | 2027-09-23 | 6d | -61.12d | 1.88d |  | 24x7 Cutover | Production Key Users [200%]; Sales Key Users [200%]; Yamashita Aki | 240h | 216 | 216 | Cutover |
| 245 | 11.7 | Go / No-Go Decision - Wave 2 |  | 1d | 2027-10-15 | 2027-10-15 | 244 | 2027-09-24 | 2027-09-24 | 1d | -14d | 0d |  |  | Hasegawa Kunio; Amano Shigeru; Sugiyama Toru | 24h | 39.6 | 39.6 | Cutover |
| 246 | 11.8 | Go-Live Wave 2 | milestone | 0d | 2027-10-15 | 2027-10-15 | 245 | 2027-09-24 | 2027-09-24 | 0d | -14d | 0d | 2027-09-24 |  |  |  |  |  | Cutover |
| 247 | 11.9 | Hypercare - Wave 2 |  | 30d | 2027-10-18 | 2027-11-30 | 246 | 2027-09-27 | 2027-11-09 | 30d | 0d |  |  |  | Kanda Shohei [50%]; Yamashita Aki [50%]; Handa Yuri (SI Partner) [50%]; Kuroda Yamato [50%]; Yokota Kei [30%] | 552h | 712.8 | 712.8 | Cutover |
| 248 | 12 | **Program Closure** |  | 111d | 2027-08-18 | 2028-02-02 |  | 2027-07-27 | 2028-01-13 | 111d | 0d |  |  |  |  | 1180h | 316.6 | 316.6 |  |
| 249 | 12.1 | System Stabilization Review |  | 15d | 2027-12-01 | 2027-12-21 | 247 | 2027-11-10 | 2027-12-01 | 15d | 0d |  |  |  | Sugiyama Toru [50%]; Kikuchi Rie [50%]; Nagai Chiaki [30%] | 156h | 198 | 198 | Program Management |
| 250 | 12.2 | Benefits Realization Measurement |  | 20d | 2027-12-22 | 2028-01-25 | 249 | 2027-12-02 | 2028-01-04 | 20d | 0d |  |  |  | Amano Shigeru [50%]; Matsuda Kanako [50%]; Finance Key Users [50%] | 240h | 288 | 288 | Program Management |
| 251 | 12.3 | Handover to Application Support |  | 20d | 2027-11-01 | 2027-11-30 | 247FF | 2027-10-12 | 2027-11-09 | 20d | 15d | 0d |  |  | Sugiyama Toru [80%]; Ito Naoko [30%]; Yamashita Aki [30%]; Okazaki Ren (SI Partner) [30%] | 272h | 399.2 | 399.2 | Program Management |
| 252 | 12.4 | Legacy System Parallel Operation |  | 40d | 2027-08-18 | 2027-10-15 | 246SF | 2027-07-27 | 2027-09-24 | 40d | 45d | 30d |  |  | Sugiyama Toru [20%]; Fukui Kanade [30%]; Finance Key Users [30%] | 256h | 284.8 | 284.8 | Infrastructure |
| 253 | 12.5 | Legacy System Decommissioning |  | 25d | 2027-12-01 | 2028-01-11 | 251, 252 | 2027-11-10 | 2027-12-15 | 25d | 15d |  |  |  | Tanigawa Osamu [50%]; Sugiyama Toru [30%]; Hardware and Cloud Platform | 160h | -978 | -978 | Infrastructure |
| 254 | 12.6 | Lessons Learned Workshop |  | 5d | 2028-01-26 | 2028-02-01 | 250 | 2028-01-05 | 2028-01-12 | 5d | 0d |  |  |  | Amano Shigeru [50%]; Kikuchi Rie [50%]; Yokota Kei [50%]; Matsuda Kanako [30%] | 72h | 86.4 | 86.4 | Program Management |
| 255 | 12.7 | Final Steering Committee |  | 1d | 2028-02-02 | 2028-02-02 | 254, 253 | 2028-01-13 | 2028-01-13 | 1d | 0d |  |  |  | Hasegawa Kunio; Amano Shigeru; Sugiyama Toru [50%]; Kikuchi Rie [50%] | 24h | 38.2 | 38.2 | Program Management |
| 256 | 12.8 | Program Closed | milestone | 0d | 2028-02-02 | 2028-02-02 | 255 | 2028-01-13 | 2028-01-13 | 0d | 0d |  |  |  |  |  |  |  | Program Management |

Notes:
- 252: The legacy system stays available until wave 2 goes live; the link is start-to-finish on the go-live milestone.
- 253: Decommissioning releases the legacy hosting contract; the negative cost represents the returned deposit.
